# WBS

How a schedule from MS Project changed from version to version. A marks actual dates.

## Version 1 (saved 2011-07-25)

Note of the change: Se agregaron recursos al Cronograma.mpp

| ID | WBS | Task | Duration | Start | Finish | Predecessors | Total float |
| --- | --- | --- | --- | --- | --- | --- | --- |
| 1 | 1 | **ICCI** | 1074.75d | 2011-06-09 | 2015-07-22 |  | 0d |
| 2 | 1.1 | **Planificación y gestión** | 30d | 2011-06-09 | 2011-07-20 |  | 0d |
| 3 | 1.1.1 | **Proyecto gestionado** | 30d | 2011-06-09 | 2011-07-20 |  | 0d |
| 4 |  | Realizar scope statement | 40h | 2011-06-09 | 2011-06-15 |  | 0d |
| 5 |  | Realizar WBS | 40h | 2011-06-16 | 2011-06-22 | 4 | 1169.25d |
| 6 |  | Realizar plan de gestión de riesgos | 80h | 2011-06-16 | 2011-06-29 | 4 | 1164.25d |
| 7 |  | Realizar reuniones de progreso con cliente | 40h | 2011-06-16 | 2011-06-22 | 4 | 1169.25d |
| 8 |  | Realizar reuniones de progreso internas | 200h | 2011-06-16 | 2011-07-20 | 4 | 1149.25d |
| 9 |  | Realizar gestion de tiempo | 80h | 2011-06-16 | 2011-06-29 | 4 | 1007.25d |
| 10 | 1.1.2 | **Personal contratado** | 10d | 2011-06-30 | 2011-07-13 |  | 1007.25d |
| 11 |  | Realizar entrevistas | 40h | 2011-06-30 | 2011-07-06 | 9 | 1007.25d |
| 12 |  | Contratar personal | 40h | 2011-07-07 | 2011-07-13 | 11 | 1007.25d |
| 13 | 1.2 | **Centros de capacitación seleccionados** | 36.88d | 2011-06-09 | 2011-07-29 |  | 0d |
| 14 | 1.2.1 | **Informe de especificaciones y requerimientos generales** | 2.5d | 2011-06-16 | 2011-06-20 | 4 | 0d |
| 15 |  | Establecer especificaciones y requerimientos generales | 7h | 2011-06-16 | 2011-06-16 |  | 0d |
| 16 |  | Realizar informe de especificaciones y requerimientos generales | 13h | 2011-06-16 | 2011-06-20 | 15 | 0d |
| 17 | 1.2.2 | **Centros de capital seleccionados** | 15.38d | 2011-06-20 | 2011-07-11 | 16 | 14d |
| 18 |  | Solicitar los 20 centros definidos por Gobierno | 3h | 2011-06-20 | 2011-06-20 |  | 14d |
| 19 |  | Inspeccionar centros | 120h | 2011-06-20 | 2011-07-11 | 18 | 14d |
| 20 | 1.2.3 | **Centros interior seleccionados** | 36.88d | 2011-06-09 | 2011-07-29 |  | 0d |
| 21 | 1.2.3.1 | **Localidades propuestas** | 13.12d | 2011-06-09 | 2011-06-28 |  | 0d |
| 22 |  | Solicitar al Gobierno información de colegios del interior | 20h | 2011-06-09 | 2011-06-13 |  | 5d |
| 23 |  | Analizar y seleccionar 30 localidades | 40h | 2011-06-20 | 2011-06-27 | 16, 22 | 0d |
| 24 |  | Realizar propuesta de localidades seleccionadas | 5h | 2011-06-27 | 2011-06-28 | 23 | 0d |
| 25 | 1.2.3.2 | **Centros candidatos** | 23.75d | 2011-06-28 | 2011-07-29 | 21 | 0d |
| 26 |  | Inspeccionar centros seleccionados | 180h | 2011-06-28 | 2011-07-28 |  | 0d |
| 27 |  | Notificar selección al colegio | 10h | 2011-07-28 | 2011-07-29 | 26 | 0d |
| 28 | 1.3 | **Equipamiento comprado** | 52.88d | 2011-06-09 | 2011-08-22 |  | 36.88d |
| 29 | 1.3.1 | **Planificación de requerimientos de compras** | 39.23d | 2011-06-09 | 2011-08-03 |  | 36.88d |
| 30 | 1.3.1.1 | **Políticas de compra establecidas** | 38.05d | 2011-06-09 | 2011-08-02 |  | 36.88d |
| 31 | 1.3.1.1.1 | **Parámetros de costo establecidos** | 1.18d | 2011-07-29 | 2011-08-02 | 13 | 0d |
| 32 |  | Confeccionar parametrización de costo de infraestructura | 9.41h | 2011-07-29 | 2011-08-02 |  | 0d |
| 33 |  | Confeccionar parametrización de costo de mobiliario | 9.41h | 2011-07-29 | 2011-08-02 |  | 0d |
| 34 |  | Parámetros de disponibilidad establecidos | 9.41h | 2011-06-09 | 2011-06-10 |  | 1178.57d |
| 35 | 1.3.1.1.3 | **Parámetros de cantidad establecidos** | 0.59d | 2011-07-29 | 2011-08-01 | 13 | 0.59d |
| 36 |  | Confeccionar parametrización de equipamiento informático | 4.71h | 2011-07-29 | 2011-08-01 |  | 0.59d |
| 37 |  | Confeccionar parametrización de mobiliario | 4.71h | 2011-07-29 | 2011-08-01 |  | 0.59d |
| 38 |  | Parámetros de garantia establecidos | 2h | 2011-06-09 | 2011-06-09 |  | 1179.5d |
| 39 | 1.3.1.2 | **Informes técnicos aprobados** | 1.18d | 2011-08-02 | 2011-08-03 | 31, 35 | 0d |
| 40 |  | Realizar informe de pedido de equipamiento informático | 9.41h | 2011-08-02 | 2011-08-03 |  | 0d |
| 41 |  | Realizar informe de pedido de mobiliario | 9.41h | 2011-08-02 | 2011-08-03 |  | 0d |
| 42 |  | Verificar cobertura de requerimientos | 2.35h | 2011-08-02 | 2011-08-02 |  | 0.88d |
| 43 | 1.3.2 | **Cotizaciones solicitadas** | 8.29d | 2011-08-03 | 2011-08-15 | 39 | 0d |
| 44 | 1.3.2.1 | **Pedido de cotización confeccionado** | 5.29d | 2011-08-03 | 2011-08-10 |  | 0d |
| 45 |  | Confeccionar pedido de cotización de hardware | 9.41h | 2011-08-03 | 2011-08-04 |  | 4.12d |
| 46 |  | Confeccionar pedido de cotización de software | 28.23h | 2011-08-03 | 2011-08-08 |  | 1.76d |
| 47 |  | Confeccionar pedido de cotización de insumos | 42.35h | 2011-08-03 | 2011-08-10 |  | 0d |
| 48 |  | Confeccionar pedido de cotización de mobiliario | 2.35h | 2011-08-03 | 2011-08-03 |  | 5d |
| 49 | 1.3.2.2 | **Pedido de cotizaciones enviadas** | 3d | 2011-08-10 | 2011-08-15 | 44 | 0d |
| 50 |  | Seleccionar proveedores propuestos | 24h | 2011-08-10 | 2011-08-15 |  | 0d |
| 51 |  | Enviar pedido de cotización de hardware | 7.06h | 2011-08-10 | 2011-08-11 |  | 2.12d |
| 52 |  | Enviar pedido de cotización de software | 7.06h | 2011-08-10 | 2011-08-11 |  | 2.12d |
| 53 |  | Enviar pedido de cotización de insumos | 2.35h | 2011-08-10 | 2011-08-10 |  | 2.71d |
| 54 |  | Enviar pedido de cotización de mobiliario | 2.35h | 2011-08-10 | 2011-08-10 |  | 2.71d |
| 55 | 1.3.3 | **Pedidos realizados** | 5.35d | 2011-08-15 | 2011-08-22 | 43 | 0d |
| 56 | 1.3.3.1 | **Proveedores seleccionados** | 1.18d | 2011-08-15 | 2011-08-16 |  | 0d |
| 57 |  | Realizar evaluación de costos | 9.41h | 2011-08-15 | 2011-08-16 |  | 0d |
| 58 |  | Analizar tiempo de entrega | 2.35h | 2011-08-15 | 2011-08-15 |  | 0.88d |
| 59 |  | Evaluar reputación de proveedor | 2.35h | 2011-08-15 | 2011-08-15 |  | 0.88d |
| 60 | 1.3.3.2 | **Pedidos enviados** | 4.18d | 2011-08-16 | 2011-08-22 | 56 | 0d |
| 61 |  | Confeccionar ordenes de compra | 9.41h | 2011-08-16 | 2011-08-17 |  | 0d |
| 62 |  | Realizar pedidos de compra a proveedores | 24h | 2011-08-17 | 2011-08-22 | 61 | 0d |
| 63 | 1.4 | **Plan de logística** | 395.52d | 2011-08-03 | 2013-02-06 |  | 0d |
| 64 | 1.4.1 | **Depósito alquilado** | 12.69d | 2011-08-03 | 2011-08-19 | 39 | 0.96d |
| 65 |  | Confeccionar requerimientos de infraestructura | 4h | 2011-08-03 | 2011-08-03 |  | 0.96d |
| 66 |  | Seleccionar depósito | 17.51h | 2011-08-03 | 2011-08-05 | 65 | 0.96d |
| 67 |  | Alquilar depósito | 80h | 2011-08-05 | 2011-08-19 | 66 | 0.96d |
| 68 |  | Contratar servicio de seguridad | 40h | 2011-08-05 | 2011-08-12 | 66 | 5.96d |
| 69 | 1.4.2 | **Equipamientos y materiales recibidos** | 40d | 2011-08-22 | 2011-10-17 | 62, 64 | 0d |
| 70 |  | Recibir equipamientos y materiales | 160h | 2011-08-22 | 2011-09-19 |  | 0d |

| ID | WBS | Task | Duration | Start | Finish | Predecessors | Total float |
| --- | --- | --- | --- | --- | --- | --- | --- |
| 71 |  | Controlar equipamientos y materiales | 40h | 2011-09-19 | 2011-09-26 | 70 | 0d |
| 72 |  | Catalogar equipamientos y materiales | 80h | 2011-09-26 | 2011-10-10 | 71 | 0d |
| 73 |  | Almacenar equipamientos y materiales | 40h | 2011-10-10 | 2011-10-17 | 72 | 0d |
| 74 | 1.4.3 | **Embalaje realizado** | 23d | 2012-07-27 | 2012-08-29 | 69, 89 | 0d |
| 75 |  | Seleccionar equipos | 40h | 2012-07-27 | 2012-08-03 | 69, 89 | 0d |
| 76 |  | Asignar centro educativo | 24h | 2012-08-03 | 2012-08-08 | 75 | 0d |
| 77 |  | Embalar equipamiento | 80h | 2012-08-08 | 2012-08-22 | 76 | 0d |
| 78 |  | Controlar equipamiento | 40h | 2012-08-22 | 2012-08-29 | 77 | 0d |
| 79 | 1.4.4 | **Equipamientos y materiales entregados** | 115d | 2012-08-29 | 2013-02-06 | 74 | 0d |
| 80 |  | Seleccionar servicio de transporte | 40h | 2012-08-29 | 2012-09-05 |  | 0d |
| 81 | 1.4.4.2 | **Hoja de ruta definida** | 15d | 2012-09-05 | 2012-09-26 | 80 | 0d |
| 82 |  | Confeccionar hoja de ruta | 80h | 2012-09-05 | 2012-09-19 |  | 0d |
| 83 |  | Gestionar hoja de ruta | 40h | 2012-09-19 | 2012-09-26 | 82 | 0d |
| 84 |  | Cargar equipamiento y materiales | 120h | 2012-09-26 | 2012-10-17 | 81 | 0d |
| 85 |  | Transportar equipamientos y materiales | 400h | 2012-10-17 | 2012-12-26 | 84 | 0d |
| 86 |  | Descargar equipamientos y materiales | 200h | 2012-12-26 | 2013-01-30 | 85 | 0d |
| 87 |  | Controlar equipamientos y materiales | 40h | 2013-01-30 | 2013-02-06 | 86 | 0d |
| 88 | 1.5 | **Centros de capacitación instalados** | 1022.83d | 2011-08-19 | 2015-07-22 | 64 | 0d |
| 89 | 1.5.1 | **Equipos informáticos configurados** | 244.83d | 2011-08-19 | 2012-07-27 | 64 | 0d |
| 90 |  | Montar infraestructura del laboratorio | 5h | 2011-08-19 | 2011-08-22 |  | 40.33d |
| 91 | 1.5.1.2 | **Servidores configurados** | 23.62d | 2011-10-17 | 2011-11-18 | 69, 90 | 180.25d |
| 92 |  | Preparar paquete de software | 1h | 2011-10-17 | 2011-10-17 | 69, 90 | 180.25d |
| 93 |  | Instalar paquete de software | 16h | 2011-10-18 | 2011-10-19 | 92 | 180.25d |
| 94 |  | Testear servidor | 16h | 2011-10-20 | 2011-10-21 | 93 | 180.25d |
| 95 |  | Clonar servidores | 156h | 2011-10-24 | 2011-11-18 | 94 | 180.25d |
| 96 | 1.5.1.3 | **PC's configuradas** | 203.88d | 2011-10-17 | 2012-07-27 | 69, 90 | 0d |
| 97 |  | Preparar paquete de software | 1h | 2011-10-17 | 2011-10-17 | 69, 90 | 0d |
| 98 |  | Instalar paquete de software | 16h | 2011-10-18 | 2011-10-19 | 97 | 0d |
| 99 |  | Testear PC | 16h | 2011-10-20 | 2011-10-21 | 98 | 0d |
| 100 |  | Clonar PC's | 1598h | 2011-10-24 | 2012-07-27 | 99 | 0d |
| 101 | 1.5.2 | **Infraestructura instalada** | 640d | 2013-02-06 | 2015-07-22 | 79 | 0d |
| 102 |  | Montar mobiliario | 4800h | 2013-02-06 | 2015-05-27 |  | 0d |
| 103 |  | Realizar instalación eléctrica | 960h | 2013-02-06 | 2013-07-24 |  | 480d |
| 104 |  | Realizar cableado estructurado | 4800h | 2013-02-06 | 2015-05-27 |  | 0d |
| 105 |  | Instalación y configuración de acceso a internet | 320h | 2015-05-27 | 2015-07-22 | 102, 103, 104 | 0d |
| 106 |  | Configuración de equipos informáticos en red de datos | 320h | 2015-05-27 | 2015-07-22 | 102, 103, 104 | 0d |
| 107 | 1.6 | **Docentes capacitados** | 177d | 2011-07-14 | 2012-03-16 |  | 872.75d |
| 108 | 1.6.1 | **Capacitadores seleccionados** | 21d | 2011-07-14 | 2011-08-11 | 10 | 872.75d |
| 109 |  | Confeccionar método de selección | 8h | 2011-07-14 | 2011-07-14 |  | 872.75d |
| 110 |  | Comunicar a instituciones educativas | 80h | 2011-07-15 | 2011-07-28 | 109 | 872.75d |
| 111 |  | Evaluar capacitadores | 80h | 2011-07-29 | 2011-08-11 | 110 | 872.75d |
| 112 | 1.6.2 | **Programa de contenidos** | 16d | 2011-08-12 | 2011-09-02 | 108 | 872.75d |
| 113 |  | Definir objetivos específicos | 8h | 2011-08-12 | 2011-08-12 |  | 872.75d |
| 114 |  | Confeccionar temario | 8h | 2011-08-15 | 2011-08-15 | 113 | 872.75d |
| 115 |  | Confeccionar actividades | 16h | 2011-08-16 | 2011-08-17 | 114 | 872.75d |
| 116 |  | Establecer duración y método de capacitación | 8h | 2011-08-18 | 2011-08-18 | 115 | 872.75d |
| 117 |  | Definir material de estudio | 8h | 2011-08-19 | 2011-08-19 | 116 | 872.75d |
| 118 |  | Gestionar material de estudio | 80h | 2011-08-22 | 2011-09-02 | 117 | 872.75d |
| 119 | 1.6.3 | **Docentes seleccionados** | 21d | 2011-07-29 | 2011-08-29 | 13 | 876.88d |
| 120 |  | Confeccionar perfil del docente | 8h | 2011-07-29 | 2011-08-01 |  | 876.88d |
| 121 |  | Comunicar perfil a escuelas | 80h | 2011-08-01 | 2011-08-15 | 120 | 876.88d |
| 122 |  | Evaluar docentes | 80h | 2011-08-15 | 2011-08-29 | 121 | 876.88d |
| 123 | 1.6.4 | **Capacitación docente** | 140d | 2011-09-05 | 2012-03-16 | 112, 119 | 872.75d |
| 124 | 1.6.4.1 | **Capacitación centralizada** | 25d | 2011-09-05 | 2011-10-07 |  | 987.75d |
| 125 |  | Construir cronograma de llegada y estadía de docentes | 40h | 2011-09-05 | 2011-09-09 |  | 987.75d |
| 126 |  | Preparar alojamiento de los docentes | 80h | 2011-09-12 | 2011-09-23 | 125 | 987.75d |
| 127 |  | Coordinar llegada de docentes | 32h | 2011-09-26 | 2011-09-29 | 126 | 987.75d |
| 128 |  | Dictar capacitación | 40h | 2011-09-30 | 2011-10-06 | 127 | 987.75d |
| 129 |  | Plantear plan de acción a implementar | 8h | 2011-10-07 | 2011-10-07 | 128 | 987.75d |
| 130 | 1.6.4.2 | **Capacitación itinerante** | 140d | 2011-09-05 | 2012-03-16 |  | 872.75d |
| 131 |  | Coordinar cronograma de visitas | 240h | 2011-09-05 | 2011-10-14 | 13 | 872.75d |
| 132 |  | Gestionar visita de los capacitadores | 240h | 2011-10-17 | 2011-11-25 | 131 | 872.75d |
| 133 |  | Dictar capacitación | 320h | 2011-11-28 | 2012-01-20 | 132 | 872.75d |
| 134 |  | Presentar plan de acción | 320h | 2012-01-23 | 2012-03-16 | 133 | 872.75d |

## Version 2 (saved 2011-07-26)

Last finish 2015-07-22 → 2014-10-06 (-289d).

Changed:

| ID | Task | Start | Finish | Duration | Total float | Predecessors | Other |
| --- | --- | --- | --- | --- | --- | --- | --- |
| 1 | **ICCI** |  | 2015-07-22 → 2014-10-06 (-289d) | 1074.75d → 867.05d |  |  |  |
| 15 | Establecer especificaciones y requerimientos generales |  |  |  |  |  | resources none → Alejandra Reinoso [85%]; Arquitecto [85%]; Tecnico [85%]; Electricista [85%] |
| 16 | Realizar informe de especificaciones y requerimientos generales |  |  |  |  |  | resources none → Alejandra Reinoso [85%]; PM [85%] |
| 18 | Solicitar los 20 centros definidos por Gobierno |  |  |  |  |  | resources none → Alejandra Reinoso [85%]; PM [85%] |
| 19 | Inspeccionar centros |  |  |  |  |  | resources none → Inspector1 [85%]; Inspector2 [85%]; Inspector3 [85%]; Inspector4 [85%]; Inspector5 [85%]; Inspector6 [85%] |
| 22 | Solicitar al Gobierno información de colegios del interior |  |  |  |  |  | resources none → Alejandra Reinoso |
| 23 | Analizar y seleccionar 30 localidades |  |  |  |  |  | resources none → Alejandra Reinoso [85%]; Ayudante1 [85%]; Ayudante2 [85%]; Ayudante3 [85%]; Ayudante4 [85%] |
| 24 | Realizar propuesta de localidades seleccionadas |  |  |  |  |  | resources none → Alejandra Reinoso [85%]; PM [85%] |
| 26 | Inspeccionar centros seleccionados |  |  |  |  |  | resources none → Inspector1 [85%]; Inspector2 [85%]; Inspector3 [85%]; Inspector4 [85%]; Inspector5 [85%]; Inspector6 [85%] |
| 27 | Notificar selección al colegio |  |  |  |  |  | resources none → Alejandra Reinoso [85%]; Ayudante1 [85%] |
| 28 | **Equipamiento comprado** | 2011-06-09 → 2011-07-29 (+50d) | 2011-08-22 → 2011-08-24 (+2d) | 52.88d → 17.18d | 36.88d → 0d |  |  |
| 29 | **Planificación de requerimientos de compras** | 2011-06-09 → 2011-07-29 (+50d) | 2011-08-03 → 2011-08-04 (+1d) | 39.23d → 3.53d | 36.88d → 0d |  |  |
| 30 | **Políticas de compra establecidas** | 2011-06-09 → 2011-07-29 (+50d) |  | 38.05d → 1.18d | 36.88d → 0d |  |  |
| 32 | Confeccionar parametrización de costo de infraestructura |  |  |  |  | none → 13 |  |
| 33 | Confeccionar parametrización de costo de mobiliario |  |  |  |  | none → 13 |  |
| 34 | Parámetros de disponibilidad establecidos | 2011-06-09 → 2011-07-29 (+50d) | 2011-06-10 → 2011-08-02 (+53d) |  | 1178.57d → 1037.88d | none → 13 |  |
| 36 | Confeccionar parametrización de equipamiento informático |  |  |  |  | none → 13 |  |
| 37 | Confeccionar parametrización de mobiliario |  |  |  |  | none → 13 |  |
| 38 | Parámetros de garantia establecidos | 2011-06-09 → 2011-07-29 (+50d) | 2011-06-09 → 2011-08-01 (+53d) |  | 1179.5d → 1038.8d | none → 13 |  |
| 39 | **Informes técnicos aprobados** |  | 2011-08-03 → 2011-08-04 (+1d) | 1.18d → 2.35d |  |  |  |
| 41 | Realizar informe de pedido de mobiliario | 2011-08-02 → 2011-08-03 (+1d) | 2011-08-03 → 2011-08-04 (+1d) |  |  | none → 40 |  |
| 42 | Verificar cobertura de requerimientos | 2011-08-02 → 2011-08-03 (+1d) | 2011-08-02 → 2011-08-03 (+1d) |  |  | none → 40 |  |
| 43 | **Cotizaciones solicitadas** | 2011-08-03 → 2011-08-04 (+1d) | 2011-08-15 → 2011-08-16 (+1d) |  |  |  |  |
| 44 | **Pedido de cotización confeccionado** | 2011-08-03 → 2011-08-04 (+1d) | 2011-08-10 → 2011-08-11 (+1d) |  |  | none → 39 |  |
| 45 | Confeccionar pedido de cotización de hardware | 2011-08-03 → 2011-08-04 (+1d) | 2011-08-04 → 2011-08-05 (+1d) |  |  | none → 39 |  |
| 46 | Confeccionar pedido de cotización de software | 2011-08-03 → 2011-08-04 (+1d) | 2011-08-08 → 2011-08-09 (+1d) |  |  | none → 39 |  |
| 47 | Confeccionar pedido de cotización de insumos | 2011-08-03 → 2011-08-04 (+1d) | 2011-08-10 → 2011-08-11 (+1d) |  |  | none → 39 |  |
| 48 | Confeccionar pedido de cotización de mobiliario | 2011-08-03 → 2011-08-04 (+1d) | 2011-08-03 → 2011-08-04 (+1d) |  |  | none → 39 |  |
| 49 | **Pedido de cotizaciones enviadas** | 2011-08-10 → 2011-08-11 (+1d) | 2011-08-15 → 2011-08-16 (+1d) |  |  |  |  |
| 50 | Seleccionar proveedores propuestos | 2011-08-10 → 2011-08-11 (+1d) | 2011-08-15 → 2011-08-16 (+1d) |  |  | none → 44 |  |
| 51 | Enviar pedido de cotización de hardware | 2011-08-10 → 2011-08-11 (+1d) | 2011-08-11 → 2011-08-12 (+1d) |  |  | none → 44 |  |
| 52 | Enviar pedido de cotización de software | 2011-08-10 → 2011-08-11 (+1d) | 2011-08-11 → 2011-08-12 (+1d) |  |  | none → 44 |  |
| 53 | Enviar pedido de cotización de insumos | 2011-08-10 → 2011-08-11 (+1d) | 2011-08-10 → 2011-08-11 (+1d) |  |  | none → 44 |  |
| 54 | Enviar pedido de cotización de mobiliario | 2011-08-10 → 2011-08-11 (+1d) | 2011-08-10 → 2011-08-11 (+1d) |  |  | none → 44 |  |
| 55 | **Pedidos realizados** | 2011-08-15 → 2011-08-16 (+1d) | 2011-08-22 → 2011-08-24 (+2d) |  |  |  |  |
| 56 | **Proveedores seleccionados** | 2011-08-15 → 2011-08-16 (+1d) | 2011-08-16 → 2011-08-17 (+1d) |  |  | none → 43 |  |
| 57 | Realizar evaluación de costos | 2011-08-15 → 2011-08-16 (+1d) | 2011-08-16 → 2011-08-17 (+1d) |  |  | none → 43 |  |
| 58 | Analizar tiempo de entrega | 2011-08-15 → 2011-08-16 (+1d) | 2011-08-15 → 2011-08-16 (+1d) |  |  | none → 43 |  |
| 59 | Evaluar reputación de proveedor | 2011-08-15 → 2011-08-16 (+1d) | 2011-08-15 → 2011-08-16 (+1d) |  |  | none → 43 |  |
| 60 | **Pedidos enviados** | 2011-08-16 → 2011-08-17 (+1d) | 2011-08-22 → 2011-08-24 (+2d) |  |  |  |  |
| 61 | Confeccionar ordenes de compra | 2011-08-16 → 2011-08-17 (+1d) | 2011-08-17 → 2011-08-19 (+2d) |  |  | none → 59 |  |
| 62 | Realizar pedidos de compra a proveedores | 2011-08-17 → 2011-08-19 (+2d) | 2011-08-22 → 2011-08-24 (+2d) |  |  |  |  |
| 63 | **Plan de logística** | 2011-08-03 → 2011-08-24 (+21d) | 2013-02-06 → 2012-04-23 (-289d) | 395.52d → 173d |  |  |  |
| 64 | **Depósito alquilado** | 2011-08-03 → 2011-08-24 (+21d) | 2011-08-19 → 2011-09-12 (+24d) | 12.69d → 13.5d | 0.96d → 159.5d | 39 → 39, 62 |  |
| 65 | Confeccionar requerimientos de infraestructura | 2011-08-03 → 2011-08-24 (+21d) | 2011-08-03 → 2011-08-24 (+21d) |  | 0.96d → 159.5d | none → 39 |  |
| 66 | Seleccionar depósito | 2011-08-03 → 2011-08-24 (+21d) | 2011-08-05 → 2011-08-29 (+24d) | 17.51h → 24h | 0.96d → 159.5d |  |  |
| 67 | Alquilar depósito | 2011-08-05 → 2011-08-29 (+24d) | 2011-08-19 → 2011-09-12 (+24d) |  | 0.96d → 159.5d |  |  |
| 68 | Contratar servicio de seguridad | 2011-08-05 → 2011-08-29 (+24d) | 2011-08-12 → 2011-09-05 (+24d) |  | 5.96d → 164.5d |  |  |
| 69 | **Equipamientos y materiales recibidos** | 2011-08-22 → 2011-08-24 (+2d) | 2011-10-17 → 2011-10-19 (+2d) |  |  | 62, 64 → 62 |  |
| 70 | Recibir equipamientos y materiales | 2011-08-22 → 2011-08-24 (+2d) | 2011-09-19 → 2011-09-21 (+2d) |  |  |  |  |
| 71 | Controlar equipamientos y materiales | 2011-09-19 → 2011-09-21 (+2d) | 2011-09-26 → 2011-09-28 (+2d) |  |  |  |  |
| 72 | Catalogar equipamientos y materiales | 2011-09-26 → 2011-09-28 (+2d) | 2011-10-10 → 2011-10-12 (+2d) |  |  |  |  |
| 73 | Almacenar equipamientos y materiales | 2011-10-10 → 2011-10-12 (+2d) | 2011-10-17 → 2011-10-19 (+2d) |  |  |  |  |
| 74 | **Embalaje realizado** | 2012-07-27 → 2011-10-19 (-282d) | 2012-08-29 → 2011-11-21 (-282d) |  |  | 69, 89 → 69 |  |
| 75 | Seleccionar equipos | 2012-07-27 → 2011-10-19 (-282d) | 2012-08-03 → 2011-10-26 (-282d) |  |  | 69, 89 → 69 |  |
| 76 | Asignar centro educativo | 2012-08-03 → 2011-10-26 (-282d) | 2012-08-08 → 2011-10-31 (-282d) |  |  |  |  |
| 77 | Embalar equipamiento | 2012-08-08 → 2011-10-31 (-282d) | 2012-08-22 → 2011-11-14 (-282d) |  |  |  |  |
| 78 | Controlar equipamiento | 2012-08-22 → 2011-11-14 (-282d) | 2012-08-29 → 2011-11-21 (-282d) |  | 0d → 750d |  |  |
| 79 | **Equipamientos y materiales entregados** | 2012-08-29 → 2011-11-14 (-289d) | 2013-02-06 → 2012-04-23 (-289d) |  |  | 74 → 77 |  |
| 80 | Seleccionar servicio de transporte | 2012-08-29 → 2011-11-14 (-289d) | 2012-09-05 → 2011-11-21 (-289d) |  |  | none → 77 |  |
| 81 | **Hoja de ruta definida** | 2012-09-05 → 2011-11-21 (-289d) | 2012-09-26 → 2011-12-12 (-289d) |  |  |  |  |
| 82 | Confeccionar hoja de ruta | 2012-09-05 → 2011-11-21 (-289d) | 2012-09-19 → 2011-12-05 (-289d) |  |  | none → 80 |  |
| 83 | Gestionar hoja de ruta | 2012-09-19 → 2011-12-05 (-289d) | 2012-09-26 → 2011-12-12 (-289d) |  |  |  |  |
| 84 | Cargar equipamiento y materiales | 2012-09-26 → 2011-12-12 (-289d) | 2012-10-17 → 2012-01-02 (-289d) |  |  |  |  |
| 85 | Transportar equipamientos y materiales | 2012-10-17 → 2012-01-02 (-289d) | 2012-12-26 → 2012-03-12 (-289d) |  |  |  |  |
| 86 | Descargar equipamientos y materiales | 2012-12-26 → 2012-03-12 (-289d) | 2013-01-30 → 2012-04-16 (-289d) |  |  |  |  |
| 87 | Controlar equipamientos y materiales | 2013-01-30 → 2012-04-16 (-289d) | 2013-02-06 → 2012-04-23 (-289d) |  |  |  |  |
| 88 | **Centros de capacitación instalados** | 2011-08-19 → 2011-09-12 (+24d) | 2015-07-22 → 2014-10-06 (-289d) | 1022.83d → 799.5d |  |  |  |
| 89 | **Equipos informáticos configurados** | 2011-08-19 → 2011-09-12 (+24d) | 2012-07-27 → 2012-07-30 (+3d) | 244.83d → 230.38d | 0d → 569.12d |  |  |
| 90 | Montar infraestructura del laboratorio | 2011-08-19 → 2011-09-12 (+24d) | 2011-08-22 → 2011-09-13 (+22d) |  | 40.33d → 595d |  |  |

| ID | Task | Start | Finish | Total float |
| --- | --- | --- | --- | --- |
| 91 | **Servidores configurados** | 2011-10-17 → 2011-10-19 (+2d) | 2011-11-18 → 2011-11-21 (+3d) | 180.25d → 749.38d |
| 92 | Preparar paquete de software | 2011-10-17 → 2011-10-19 (+2d) | 2011-10-17 → 2011-10-19 (+2d) | 180.25d → 749.38d |
| 93 | Instalar paquete de software | 2011-10-18 → 2011-10-19 (+1d) | 2011-10-19 → 2011-10-21 (+2d) | 180.25d → 749.38d |
| 94 | Testear servidor | 2011-10-20 → 2011-10-21 (+1d) | 2011-10-21 → 2011-10-25 (+4d) | 180.25d → 749.38d |
| 95 | Clonar servidores | 2011-10-24 → 2011-10-25 (+1d) | 2011-11-18 → 2011-11-21 (+3d) | 180.25d → 749.38d |
| 96 | **PC's configuradas** | 2011-10-17 → 2011-10-19 (+2d) | 2012-07-27 → 2012-07-30 (+3d) | 0d → 569.12d |
| 97 | Preparar paquete de software | 2011-10-17 → 2011-10-19 (+2d) | 2011-10-17 → 2011-10-19 (+2d) | 0d → 569.12d |
| 98 | Instalar paquete de software | 2011-10-18 → 2011-10-19 (+1d) | 2011-10-19 → 2011-10-21 (+2d) | 0d → 569.12d |
| 99 | Testear PC | 2011-10-20 → 2011-10-21 (+1d) | 2011-10-21 → 2011-10-25 (+4d) | 0d → 569.12d |
| 100 | Clonar PC's | 2011-10-24 → 2011-10-25 (+1d) | 2012-07-27 → 2012-07-30 (+3d) | 0d → 569.12d |
| 101 | **Infraestructura instalada** | 2013-02-06 → 2012-04-23 (-289d) | 2015-07-22 → 2014-10-06 (-289d) |  |
| 102 | Montar mobiliario | 2013-02-06 → 2012-04-23 (-289d) | 2015-05-27 → 2014-08-11 (-289d) |  |
| 103 | Realizar instalación eléctrica | 2013-02-06 → 2012-04-23 (-289d) | 2013-07-24 → 2012-10-08 (-289d) |  |
| 104 | Realizar cableado estructurado | 2013-02-06 → 2012-04-23 (-289d) | 2015-05-27 → 2014-08-11 (-289d) |  |
| 105 | Instalación y configuración de acceso a internet | 2015-05-27 → 2014-08-11 (-289d) | 2015-07-22 → 2014-10-06 (-289d) |  |
| 106 | Configuración de equipos informáticos en red de datos | 2015-05-27 → 2014-08-11 (-289d) | 2015-07-22 → 2014-10-06 (-289d) |  |
