# WBS

How a schedule from MS Project changed from version to version. A marks actual dates.

## Version 1 (saved 2011-08-06)

Note of the change: Crono con recursos

| ID | WBS | Task | Duration | Start | Finish | Predecessors | Total float |
| --- | --- | --- | --- | --- | --- | --- | --- |
| 1 | 1 | **ICCI** | 177.09d | 2011-06-09 | 2012-02-13 |  | 0d |
| 2 | 1.1 | **Planificación y gestión** | 25d | 2011-06-09 | 2011-07-13 |  | 0d |
| 3 | 1.1.1 | **Proyecto gestionado** | 15d | 2011-06-09 | 2011-06-29 |  | 0d |
| 4 |  | Realizar scope statement | 40h | 2011-06-09 | 2011-06-15 |  | 0d |
| 5 |  | Realizar WBS | 40h | 2011-06-16 | 2011-06-22 | 4 | 167.09d |
| 6 |  | Realizar plan de gestión de riesgos | 80h | 2011-06-16 | 2011-06-29 | 4 | 162.09d |
| 7 |  | Realizar reuniones de progreso con cliente | 80h | 2011-06-16 | 2011-06-29 | 4 | 162.09d |
| 8 |  | Realizar reuniones de progreso internas | 40h | 2011-06-16 | 2011-06-22 | 4 | 167.09d |
| 9 |  | Realizar gestion de tiempo | 80h | 2011-06-16 | 2011-06-29 | 4 | 97.09d |
| 10 | 1.1.2 | **Personal contratado** | 10d | 2011-06-30 | 2011-07-13 |  | 97.09d |
| 11 |  | Realizar entrevistas | 40h | 2011-06-30 | 2011-07-06 | 9 | 97.09d |
| 12 |  | Contratar personal | 40h | 2011-07-07 | 2011-07-13 | 11 | 97.09d |
| 13 | 1.2 | **Centros de capacitación seleccionados** | 36.88d | 2011-06-09 | 2011-07-29 |  | 0d |
| 14 | 1.2.1 | **Informe de especificaciones y requerimientos generales** | 2.5d | 2011-06-16 | 2011-06-20 | 4 | 0d |
| 15 |  | Establecer especificaciones y requerimientos generales | 7h | 2011-06-16 | 2011-06-16 |  | 0d |
| 16 |  | Realizar informe de especificaciones y requerimientos generales | 13h | 2011-06-16 | 2011-06-20 | 15 | 0d |
| 17 | 1.2.2 | **Centros de capital seleccionados** | 15.38d | 2011-06-20 | 2011-07-11 | 16 | 14d |
| 18 |  | Solicitar los 20 centros definidos por Gobierno | 3h | 2011-06-20 | 2011-06-20 |  | 14d |
| 19 |  | Inspeccionar centros | 120h | 2011-06-20 | 2011-07-11 | 18 | 14d |
| 20 | 1.2.3 | **Centros interior seleccionados** | 36.88d | 2011-06-09 | 2011-07-29 |  | 0d |
| 21 | 1.2.3.1 | **Localidades propuestas** | 13.12d | 2011-06-09 | 2011-06-28 |  | 0d |
| 22 |  | Solicitar al Gobierno información de colegios del interior | 20h | 2011-06-09 | 2011-06-13 |  | 5d |
| 23 |  | Analizar y seleccionar 30 localidades | 40h | 2011-06-20 | 2011-06-27 | 16, 22 | 0d |
| 24 |  | Realizar propuesta de localidades seleccionadas | 5h | 2011-06-27 | 2011-06-28 | 23 | 0d |
| 25 | 1.2.3.2 | **Centros candidatos** | 23.75d | 2011-06-28 | 2011-07-29 | 21 | 0d |
| 26 |  | Inspeccionar centros seleccionados | 180h | 2011-06-28 | 2011-07-28 |  | 0d |
| 27 |  | Notificar selección al colegio | 10h | 2011-07-28 | 2011-07-29 | 26 | 0d |
| 28 | 1.3 | **Equipamiento comprado** | 15.5d | 2011-07-29 | 2011-08-22 |  | 0d |
| 29 | 1.3.1 | **Planificación de requerimientos de compras** | 3d | 2011-07-29 | 2011-08-03 |  | 0d |
| 30 | 1.3.1.1 | **Políticas de compra establecidas** | 1d | 2011-07-29 | 2011-08-01 |  | 0d |
| 31 | 1.3.1.1.1 | **Parámetros de costo establecidos** | 1d | 2011-07-29 | 2011-08-01 | 13 | 0d |
| 32 |  | Confeccionar parametrización de costo de infraestructura | 8h | 2011-07-29 | 2011-08-01 | 13 | 0d |
| 33 |  | Confeccionar parametrización de costo de mobiliario | 8h | 2011-07-29 | 2011-08-01 | 13 | 0d |
| 34 |  | Parámetros de disponibilidad establecidos | 8h | 2011-07-29 | 2011-08-01 | 13 | 139.21d |
| 35 | 1.3.1.1.3 | **Parámetros de cantidad establecidos** | 0.5d | 2011-07-29 | 2011-08-01 | 13 | 0.5d |
| 36 |  | Confeccionar parametrización de equipamiento informático | 4h | 2011-07-29 | 2011-08-01 | 13 | 0.5d |
| 37 |  | Confeccionar parametrización de mobiliario | 4h | 2011-07-29 | 2011-08-01 | 13 | 0.5d |
| 38 |  | Parámetros de garantia establecidos | 2h | 2011-07-29 | 2011-08-01 | 13 | 139.96d |
| 39 | 1.3.1.2 | **Informes técnicos aprobados** | 2d | 2011-08-01 | 2011-08-03 | 31, 35 | 0d |
| 40 |  | Realizar informe de pedido de equipamiento informático | 8h | 2011-08-01 | 2011-08-02 |  | 0d |
| 41 |  | Realizar informe de pedido de mobiliario | 8h | 2011-08-02 | 2011-08-03 | 40 | 0d |
| 42 |  | Verificar cobertura de requerimientos | 2h | 2011-08-02 | 2011-08-03 | 40 | 0.75d |
| 43 | 1.3.2 | **Cotizaciones solicitadas** | 7.5d | 2011-08-03 | 2011-08-15 | 39 | 0d |
| 44 | 1.3.2.1 | **Pedido de cotización confeccionado** | 4.5d | 2011-08-03 | 2011-08-10 | 39 | 0d |
| 45 |  | Confeccionar pedido de cotización de hardware | 24h | 2011-08-03 | 2011-08-08 | 39 | 1.5d |
| 46 |  | Confeccionar pedido de cotización de software | 24h | 2011-08-03 | 2011-08-08 | 39 | 1.5d |
| 47 |  | Confeccionar pedido de cotización de insumos | 36h | 2011-08-03 | 2011-08-10 | 39 | 0d |
| 48 |  | Confeccionar pedido de cotización de mobiliario | 2h | 2011-08-03 | 2011-08-04 | 39 | 4.25d |
| 49 | 1.3.2.2 | **Pedido de cotizaciones enviadas** | 3d | 2011-08-10 | 2011-08-15 | 44 | 0d |
| 50 |  | Seleccionar proveedores propuestos | 24h | 2011-08-10 | 2011-08-15 | 44 | 0d |
| 51 |  | Enviar pedido de cotización de hardware | 6h | 2011-08-10 | 2011-08-11 | 44 | 2.25d |
| 52 |  | Enviar pedido de cotización de software | 6h | 2011-08-10 | 2011-08-11 | 44 | 2.25d |
| 53 |  | Enviar pedido de cotización de insumos | 2h | 2011-08-10 | 2011-08-10 | 44 | 2.75d |
| 54 |  | Enviar pedido de cotización de mobiliario | 2h | 2011-08-10 | 2011-08-10 | 44 | 2.75d |
| 55 | 1.3.3 | **Pedidos realizados** | 5d | 2011-08-15 | 2011-08-22 | 43 | 0d |
| 56 | 1.3.3.1 | **Proveedores seleccionados** | 1d | 2011-08-15 | 2011-08-16 | 43 | 0d |
| 57 |  | Realizar evaluación de costos | 8h | 2011-08-15 | 2011-08-16 | 43 | 0d |
| 58 |  | Analizar tiempo de entrega | 2h | 2011-08-15 | 2011-08-15 | 43 | 0.75d |
| 59 |  | Evaluar reputación de proveedor | 2h | 2011-08-15 | 2011-08-15 | 43 | 0.75d |
| 60 | 1.3.3.2 | **Pedidos enviados** | 4d | 2011-08-16 | 2011-08-22 | 56 | 0d |
| 61 |  | Confeccionar ordenes de compra | 8h | 2011-08-16 | 2011-08-17 | 59 | 0d |
| 62 |  | Realizar pedidos de compra a proveedores | 24h | 2011-08-17 | 2011-08-22 | 61 | 0d |
| 63 | 1.4 | **Plan de logística** | 104.71d | 2011-08-22 | 2012-01-16 |  | 0d |
| 64 | 1.4.1 | **Depósito alquilado** | 8.5d | 2011-08-22 | 2011-09-01 | 39, 62 | 29.5d |
| 65 |  | Confeccionar requerimientos de infraestructura | 4h | 2011-08-22 | 2011-08-22 | 39 | 29.5d |
| 66 |  | Seleccionar depósito | 24h | 2011-08-22 | 2011-08-25 | 65 | 29.5d |
| 67 |  | Alquilar depósito | 40h | 2011-08-25 | 2011-09-01 | 66 | 29.5d |
| 68 |  | Contratar servicio de seguridad | 40h | 2011-08-25 | 2011-09-01 | 66 | 29.5d |
| 69 | 1.4.2 | **Equipamientos y materiales recibidos** | 40d | 2011-08-22 | 2011-10-17 | 62 | 0d |
| 70 |  | Recibir equipamientos y materiales | 160h | 2011-08-22 | 2011-09-19 |  | 0d |

| ID | WBS | Task | Duration | Start | Finish | Predecessors | Total float |
| --- | --- | --- | --- | --- | --- | --- | --- |
| 71 |  | Controlar equipamientos y materiales | 40h | 2011-09-19 | 2011-09-26 | 70 | 0d |
| 72 |  | Catalogar equipamientos y materiales | 80h | 2011-09-26 | 2011-10-10 | 71 | 0d |
| 73 |  | Almacenar equipamientos y materiales | 40h | 2011-10-10 | 2011-10-17 | 72 | 0d |
| 74 | 1.4.3 | **Equipos informáticos configurados** | 45.61d | 2011-09-01 | 2011-11-04 |  | 0d |
| 75 |  | Montar infraestructura del laboratorio | 16h | 2011-09-01 | 2011-09-05 | 64 | 29.5d |
| 76 | 1.4.3.2 | **Servidores configurados** | 8.03d | 2011-10-17 | 2011-10-27 |  | 6.09d |
| 77 |  | Preparar paquete de software | 1h | 2011-10-17 | 2011-10-17 | 69, 75 | 6.09d |
| 78 |  | Instalar paquete de software | 16h | 2011-10-17 | 2011-10-19 | 77 | 6.09d |
| 79 |  | Testear servidor | 16h | 2011-10-19 | 2011-10-21 | 78 | 6.09d |
| 80 |  | Clonar servidores | 31.2h | 2011-10-21 | 2011-10-27 | 79 | 6.09d |
| 81 | 1.4.3.3 | **PC's configuradas** | 14.11d | 2011-10-17 | 2011-11-04 |  | 0d |
| 82 |  | Preparar paquete de software | 1h | 2011-10-17 | 2011-10-17 | 69, 75 | 0d |
| 83 |  | Instalar paquete de software | 16h | 2011-10-17 | 2011-10-19 | 82 | 0d |
| 84 |  | Testear PC | 16h | 2011-10-19 | 2011-10-21 | 83 | 0d |
| 85 |  | Clonar PC's | 79.9h | 2011-10-21 | 2011-11-04 | 84 | 0d |
| 86 | 1.4.4 | **Embalaje realizado** | 21.61d | 2011-10-17 | 2011-11-15 |  | 14.11d |
| 87 | 1.4.4.1 | **Seleccionar equipos** | 2.5d | 2011-10-17 | 2011-10-19 |  | 80.71d |
| 88 |  | Seleccionar equipos Capital (20 centros) | 20h | 2011-10-17 | 2011-10-19 | 69 | 80.71d |
| 89 |  | Seleccionar equipos Interior (20 centros) | 20h | 2011-10-17 | 2011-10-19 | 69 | 80.71d |
| 90 | 1.4.4.2 | **Asignar centro educativo** | 1.5d | 2011-10-19 | 2011-10-21 |  | 80.71d |
| 91 |  | Asignar centro educativo Capital (20 centros) | 12h | 2011-10-19 | 2011-10-21 | 88 | 80.71d |
| 92 |  | Asignar centro educativo Interior (20 centros) | 12h | 2011-10-19 | 2011-10-21 | 89 | 80.71d |
| 93 | 1.4.4.3 | **Embalar equipamiento** | 5d | 2011-11-04 | 2011-11-11 |  | 0d |
| 94 |  | Embalar Equipamiento Capital (20 centros) | 40h | 2011-11-04 | 2011-11-11 | 74 | 0d |
| 95 |  | Embalar Equipamiento Interior (20 centros) | 40h | 2011-11-04 | 2011-11-11 | 74 | 0d |
| 96 | 1.4.4.4 | **Controlar equipamiento** | 2.5d | 2011-11-11 | 2011-11-15 |  | 63.1d |
| 97 |  | Controlar Equipamiento Capital (20 centros) | 20h | 2011-11-11 | 2011-11-15 | 94 | 63.1d |
| 98 |  | Controlar Equipamiento Interior (20 centros) | 20h | 2011-11-11 | 2011-11-15 | 95 | 63.1d |
| 99 | 1.4.5 | **Equipamientos y materiales entregados** | 45.6d | 2011-11-11 | 2012-01-16 | 93 | 0d |
| 100 |  | Seleccionar servicio de transporte | 40h | 2011-11-11 | 2011-11-18 | 93 | 0d |
| 101 | 1.4.5.2 | **Hoja de ruta definida** | 10d | 2011-11-18 | 2011-12-02 | 100 | 0d |
| 102 |  | Confeccionar hoja de ruta | 40h | 2011-11-18 | 2011-11-25 | 100 | 0d |
| 103 |  | Gestionar hoja de ruta | 40h | 2011-11-25 | 2011-12-02 | 102 | 0d |
| 104 | 1.4.5.3 | **Cargar equipamiento y materiales** | 13.5d | 2011-12-02 | 2011-12-21 | 101 | 0d |
| 105 |  | Cargar equipamientos y materiales Interior (20 centros) | 48h | 2011-12-02 | 2011-12-12 |  | 0d |
| 106 |  | Cargar equipamiento y materiales Capital (20 centros) | 60h | 2011-12-12 | 2011-12-21 | 105 | 0d |
| 107 | 1.4.5.4 | **Transportar equipamientos y materiales** | 8.35d | 2011-12-21 | 2012-01-03 | 106 | 0d |
| 108 |  | Transportar equipamientos y materiales Interior (20 centros) | 33.39h | 2011-12-21 | 2011-12-28 |  | 0d |
| 109 |  | Transportar equipamiento y materiales Capital (20 centros) | 33.45h | 2011-12-28 | 2012-01-03 | 108 | 0d |
| 110 | 1.4.5.5 | **Descargar equipamientos y materiales** | 6.23d | 2012-01-03 | 2012-01-11 | 109 | 0d |
| 111 |  | Descargar equipamientos y materiales Interior (20 centros) | 24.81h | 2012-01-03 | 2012-01-06 |  | 0d |
| 112 |  | Descargar equipamiento y materiales Capital (20 centros) | 25.06h | 2012-01-06 | 2012-01-11 | 111 | 0d |
| 113 | 1.4.5.6 | **Controlar equipamientos y materiales** | 2.51d | 2012-01-11 | 2012-01-16 | 112 | 0d |
| 114 |  | Controlar equipamientos y materiales Interior (20 centros) | 10.05h | 2012-01-11 | 2012-01-12 |  | 0d |
| 115 |  | Controlar equipamiento y materiales Capital (20 centros) | 10.05h | 2012-01-12 | 2012-01-16 | 114 | 0d |
| 116 | 1.5 | **Centros de capacitación instalados** | 20d | 2012-01-16 | 2012-02-13 |  | 0d |
| 117 | 1.5.1 | **Infraestructura instalada** | 20d | 2012-01-16 | 2012-02-13 |  | 0d |
| 118 |  | Montar mobiliario | 96h | 2012-01-16 | 2012-02-01 | 99 | 0d |
| 119 |  | Realizar instalación eléctrica | 96h | 2012-01-16 | 2012-02-01 | 99 | 0d |
| 120 |  | Realizar cableado estructurado | 96h | 2012-01-16 | 2012-02-01 | 99 | 0d |
| 121 |  | Instalación y configuración de acceso a internet | 64h | 2012-02-01 | 2012-02-13 | 118, 119, 120 | 0d |
| 122 |  | Configuración de equipos informáticos en red de datos | 64h | 2012-02-01 | 2012-02-13 | 118, 119, 120 | 0d |
| 123 | 1.6 | **Docentes capacitados** | 64.38d | 2011-07-14 | 2011-10-12 |  | 87.71d |
| 124 | 1.6.1 | **Capacitadores seleccionados** | 8.5d | 2011-07-14 | 2011-07-26 | 10 | 97.09d |
| 125 |  | Confeccionar método de selección | 8h | 2011-07-14 | 2011-07-14 |  | 97.09d |
| 126 |  | Comunicar a instituciones educativas | 20h | 2011-07-15 | 2011-07-19 | 125 | 97.09d |
| 127 |  | Evaluar capacitadores | 40h | 2011-07-19 | 2011-07-26 | 126 | 97.09d |
| 128 | 1.6.2 | **Programa de contenidos** | 7.5d | 2011-07-26 | 2011-08-04 | 124 | 97.09d |
| 129 |  | Definir objetivos específicos | 8h | 2011-07-26 | 2011-07-27 |  | 97.09d |
| 130 |  | Confeccionar temario | 8h | 2011-07-27 | 2011-07-28 | 129 | 97.09d |
| 131 |  | Confeccionar actividades | 8h | 2011-07-28 | 2011-07-29 | 130 | 97.09d |
| 132 |  | Establecer duración y método de capacitación | 8h | 2011-07-29 | 2011-08-01 | 131 | 97.09d |
| 133 |  | Definir material de estudio | 8h | 2011-08-01 | 2011-08-02 | 132 | 97.09d |
| 134 |  | Gestionar material de estudio | 20h | 2011-08-02 | 2011-08-04 | 133 | 97.09d |
| 135 | 1.6.3 | **Docentes seleccionados** | 13.5d | 2011-07-29 | 2011-08-18 | 13 | 87.71d |
| 136 |  | Confeccionar perfil del docente | 8h | 2011-07-29 | 2011-08-01 |  | 87.71d |
| 137 |  | Comunicar perfil a escuelas | 20h | 2011-08-01 | 2011-08-04 | 136 | 87.71d |
| 138 |  | Evaluar docentes | 80h | 2011-08-04 | 2011-08-18 | 137 | 87.71d |
| 139 | 1.6.4 | **Capacitación docente** | 39d | 2011-08-18 | 2011-10-12 | 128, 135 | 87.71d |
| 140 | 1.6.4.1 | **Capacitación centralizada** | 39d | 2011-08-18 | 2011-10-12 |  | 87.71d |

| ID | WBS | Task | Duration | Start | Finish | Predecessors | Total float |
| --- | --- | --- | --- | --- | --- | --- | --- |
| 141 |  | Construir cronograma de llegada y estadía de docentes | 40h | 2011-08-18 | 2011-08-25 |  | 87.71d |
| 142 |  | Preparar alojamiento de los docentes | 80h | 2011-08-25 | 2011-09-08 | 141 | 87.71d |
| 143 |  | Coordinar llegada de docentes | 32h | 2011-09-08 | 2011-09-14 | 142 | 87.71d |
| 144 |  | Dictar capacitación | 80h | 2011-09-14 | 2011-09-28 | 143 | 87.71d |
| 145 |  | Plantear plan de acción a implementar | 80h | 2011-09-28 | 2011-10-12 | 144 | 87.71d |
| 146 | 1.6.4.2 | **Capacitación itinerante** | 32d | 2011-08-18 | 2011-10-03 |  | 94.71d |
| 147 |  | Coordinar cronograma de visitas | 48h | 2011-08-18 | 2011-08-26 | 13 | 94.71d |
| 148 |  | Gestionar visita de los capacitadores | 48h | 2011-08-26 | 2011-09-05 | 147 | 94.71d |
| 149 |  | Dictar capacitación | 80h | 2011-09-05 | 2011-09-19 | 148 | 94.71d |
| 150 |  | Presentar plan de acción | 80h | 2011-09-19 | 2011-10-03 | 149 | 94.71d |

## Version 2 (saved 2011-08-07)

Note of the change: Subida final del cronograma con revision de sobreasignacion y limpieza de recursos que no se utilizan.

Last finish 2012-02-13 → 2012-02-28 (+15d).

Changed:

| ID | Task | Start | Finish | Duration | Total float | Predecessors | Other |
| --- | --- | --- | --- | --- | --- | --- | --- |
| 1 | **ICCI** |  | 2012-02-13 → 2012-02-28 (+15d) | 177.09d → 188.71d |  |  |  |
| 2 | **Planificación y gestión** |  | 2011-07-13 → 2011-08-12 (+30d) | 25d → 46.67d |  |  |  |
| 3 | **Proyecto gestionado** |  | 2011-06-29 → 2011-07-29 (+30d) | 15d → 36.67d |  |  |  |
| 5 | Realizar WBS |  | 2011-06-22 → 2011-06-17 (-5d) | 40h → 13.33h | 167.09d → 87.05d |  | resources PM → PM; Asistente Gestion1; Asistente Gestion2 |
| 6 | Realizar plan de gestión de riesgos | 2011-06-16 → 2011-06-17 (+1d) | 2011-06-29 → 2011-07-01 (+2d) |  | 162.09d → 87.05d | 4 → 5 |  |
| 7 | Realizar reuniones de progreso con cliente | 2011-06-16 → 2011-07-01 (+15d) | 2011-06-29 → 2011-07-08 (+9d) | 80h → 40h | 162.09d → 87.05d | 4 → 6 | resources PM → PM; Asistente Gestion1 |
| 8 | Realizar reuniones de progreso internas | 2011-06-16 → 2011-07-08 (+22d) | 2011-06-22 → 2011-07-15 (+23d) |  | 167.09d → 87.05d | 4 → 7 |  |
| 9 | Realizar gestion de tiempo | 2011-06-16 → 2011-07-15 (+29d) | 2011-06-29 → 2011-07-29 (+30d) |  | 97.09d → 87.05d | 4 → 8 |  |
| 10 | **Personal contratado** | 2011-06-30 → 2011-07-29 (+29d) | 2011-07-13 → 2011-08-12 (+30d) |  | 97.09d → 57.55d |  |  |
| 11 | Realizar entrevistas | 2011-06-30 → 2011-07-29 (+29d) | 2011-07-06 → 2011-08-05 (+30d) |  | 97.09d → 87.05d |  |  |
| 12 | Contratar personal | 2011-07-07 → 2011-08-05 (+29d) | 2011-07-13 → 2011-08-12 (+30d) |  | 97.09d → 57.55d |  |  |
| 13 | **Centros de capacitación seleccionados** |  | 2011-07-29 → 2011-08-02 (+4d) | 36.88d → 38.5d |  |  |  |
| 14 | **Informe de especificaciones y requerimientos generales** |  | 2011-06-20 → 2011-06-22 (+2d) | 2.5d → 4.12d |  |  |  |
| 16 | Realizar informe de especificaciones y requerimientos generales |  | 2011-06-20 → 2011-06-22 (+2d) | 13h → 26h |  |  | resources Alejandra Reinoso; PM → Alejandra Reinoso |
| 17 | **Centros de capital seleccionados** | 2011-06-20 → 2011-06-22 (+2d) | 2011-07-11 → 2011-07-05 (-6d) | 15.38d → 9.75d | 14d → 19.62d |  |  |
| 18 | Solicitar los 20 centros definidos por Gobierno | 2011-06-20 → 2011-06-22 (+2d) | 2011-06-20 → 2011-06-22 (+2d) | 3h → 6h | 14d → 19.62d |  | resources Alejandra Reinoso; PM → Alejandra Reinoso |
| 19 | Inspeccionar centros | 2011-06-20 → 2011-06-22 (+2d) | 2011-07-11 → 2011-07-05 (-6d) | 120h → 72h | 14d → 19.62d |  | resources Selección Inspector1; Selección Inspector2; Selección Inspector3; Selección Inspector4; Selección Inspector5; Selección Inspector6 → Selección Inspector1; Selección Inspector2; Selección Inspector3; Selección Inspector4; Selección Inspector5; Selección Inspector6; Selección Inspector7; Selección Inspector8; Selección Inspector9; Selección Inspector10 |
| 20 | **Centros interior seleccionados** |  | 2011-07-29 → 2011-08-02 (+4d) | 36.88d → 38.5d |  |  |  |
| 21 | **Localidades propuestas** |  | 2011-06-28 → 2011-06-29 (+1d) | 13.12d → 14.75d |  |  |  |
| 23 | Analizar y seleccionar 30 localidades | 2011-06-20 → 2011-06-22 (+2d) | 2011-06-27 → 2011-06-29 (+2d) |  |  |  |  |
| 24 | Realizar propuesta de localidades seleccionadas | 2011-06-27 → 2011-06-29 (+2d) | 2011-06-28 → 2011-06-29 (+1d) |  |  |  |  |
| 25 | **Centros candidatos** | 2011-06-28 → 2011-06-29 (+1d) | 2011-07-29 → 2011-08-02 (+4d) |  |  |  |  |
| 26 | Inspeccionar centros seleccionados | 2011-06-28 → 2011-06-29 (+1d) | 2011-07-28 → 2011-08-01 (+4d) |  |  |  | resources Selección Inspector1; Selección Inspector2; Selección Inspector3; Selección Inspector4; Selección Inspector5; Selección Inspector6 → Selección Inspector11; Selección Inspector12; Selección Inspector13; Selección Inspector14; Selección Inspector15; Selección Inspector16; Selección Inspector17; Selección Inspector18; Selección Inspector19; Selección Inspector20 |
| 27 | Notificar selección al colegio | 2011-07-28 → 2011-08-01 (+4d) | 2011-07-29 → 2011-08-02 (+4d) |  |  |  |  |
| 28 | **Equipamiento comprado** | 2011-07-29 → 2011-08-02 (+4d) | 2011-08-22 → 2011-08-25 (+3d) | 15.5d → 17d |  |  |  |
| 29 | **Planificación de requerimientos de compras** | 2011-07-29 → 2011-08-02 (+4d) | 2011-08-03 → 2011-08-08 (+5d) | 3d → 4d |  |  |  |
| 30 | **Políticas de compra establecidas** | 2011-07-29 → 2011-08-02 (+4d) | 2011-08-01 → 2011-08-04 (+3d) | 1d → 2d |  |  |  |
| 31 | **Parámetros de costo establecidos** | 2011-07-29 → 2011-08-02 (+4d) | 2011-08-01 → 2011-08-04 (+3d) | 1d → 2d |  |  |  |
| 32 | Confeccionar parametrización de costo de infraestructura | 2011-07-29 → 2011-08-02 (+4d) | 2011-08-01 → 2011-08-02 (+1d) | 8h → 2.67h | 0d → 1.67d |  | resources Jose Chavez → Asistente Compra Hardware; Asistente Compra Software; Asistente Compra Insumos |
| 33 | Confeccionar parametrización de costo de mobiliario | 2011-07-29 → 2011-08-02 (+4d) | 2011-08-01 → 2011-08-03 (+2d) |  | 0d → 1d |  | resources Jose Chavez → Asistente Compra Mobiliario |
| 34 | Parámetros de disponibilidad establecidos | 2011-07-29 → 2011-08-02 (+4d) | 2011-08-01 → 2011-08-04 (+3d) | 8h → 16h | 139.21d → 0d |  | resources Jose Chavez; Ing Mauricio Diaz → Ing Mauricio Diaz |
| 35 | **Parámetros de cantidad establecidos** | 2011-07-29 → 2011-08-02 (+4d) | 2011-08-01 → 2011-08-02 (+1d) |  | 0.5d → 1.5d |  |  |
| 36 | Confeccionar parametrización de equipamiento informático | 2011-07-29 → 2011-08-02 (+4d) | 2011-08-01 → 2011-08-02 (+1d) |  | 0.5d → 1.5d |  | resources Jose Chavez → Asistente Compra Hardware |
| 37 | Confeccionar parametrización de mobiliario | 2011-07-29 → 2011-08-02 (+4d) | 2011-08-01 → 2011-08-02 (+1d) |  | 0.5d → 1.5d |  | resources Jose Chavez → Asistente Compra Mobiliario |
| 38 | Parámetros de garantia establecidos | 2011-07-29 → 2011-08-02 (+4d) | 2011-08-01 → 2011-08-02 (+1d) | 2h → 4h | 139.96d → 1.5d |  | resources Jose Chavez; Ing Mauricio Diaz → Ing Mauricio Diaz |
| 39 | **Informes técnicos aprobados** | 2011-08-01 → 2011-08-04 (+3d) | 2011-08-03 → 2011-08-08 (+5d) |  |  |  |  |
| 40 | Realizar informe de pedido de equipamiento informático | 2011-08-01 → 2011-08-04 (+3d) | 2011-08-02 → 2011-08-05 (+3d) |  |  |  | resources Jose Chavez → Asistente Compra Hardware |
| 41 | Realizar informe de pedido de mobiliario | 2011-08-02 → 2011-08-05 (+3d) | 2011-08-03 → 2011-08-08 (+5d) |  |  |  | resources Jose Chavez → Asistente Compra Mobiliario |
| 42 | Verificar cobertura de requerimientos | 2011-08-02 → 2011-08-05 (+3d) | 2011-08-03 → 2011-08-05 (+2d) |  |  |  |  |
| 43 | **Cotizaciones solicitadas** | 2011-08-03 → 2011-08-08 (+5d) | 2011-08-15 → 2011-08-17 (+2d) |  |  |  |  |
| 44 | **Pedido de cotización confeccionado** | 2011-08-03 → 2011-08-08 (+5d) | 2011-08-10 → 2011-08-12 (+2d) |  |  |  |  |
| 45 | Confeccionar pedido de cotización de hardware | 2011-08-03 → 2011-08-08 (+5d) | 2011-08-08 → 2011-08-11 (+3d) |  |  |  | resources Jorge Perez → Asistente Compra Hardware |
| 46 | Confeccionar pedido de cotización de software | 2011-08-03 → 2011-08-08 (+5d) | 2011-08-08 → 2011-08-11 (+3d) |  |  |  | resources Jorge Perez → Asistente Compra Software |
| 47 | Confeccionar pedido de cotización de insumos | 2011-08-03 → 2011-08-08 (+5d) | 2011-08-10 → 2011-08-12 (+2d) |  |  |  | resources Jorge Perez → Asistente Compra Insumos |
| 48 | Confeccionar pedido de cotización de mobiliario | 2011-08-03 → 2011-08-08 (+5d) | 2011-08-04 → 2011-08-08 (+4d) |  |  |  | resources Jorge Perez → Asistente Compra Mobiliario |
| 49 | **Pedido de cotizaciones enviadas** | 2011-08-10 → 2011-08-15 (+5d) | 2011-08-15 → 2011-08-17 (+2d) |  |  |  |  |
| 50 | Seleccionar proveedores propuestos | 2011-08-10 → 2011-08-15 (+5d) | 2011-08-15 → 2011-08-17 (+2d) |  |  |  |  |
| 51 | Enviar pedido de cotización de hardware | 2011-08-10 → 2011-08-15 (+5d) | 2011-08-11 → 2011-08-15 (+4d) |  |  |  | resources Jorge Perez → Asistente Compra Hardware |
| 52 | Enviar pedido de cotización de software | 2011-08-10 → 2011-08-15 (+5d) | 2011-08-11 → 2011-08-15 (+4d) |  |  |  | resources Jorge Perez → Asistente Compra Software |
| 53 | Enviar pedido de cotización de insumos | 2011-08-10 → 2011-08-15 (+5d) | 2011-08-10 → 2011-08-15 (+5d) |  |  |  | resources Jorge Perez → Asistente Compra Insumos |
| 54 | Enviar pedido de cotización de mobiliario | 2011-08-10 → 2011-08-15 (+5d) | 2011-08-10 → 2011-08-15 (+5d) |  |  |  | resources Jorge Perez → Asistente Compra Mobiliario |
| 55 | **Pedidos realizados** | 2011-08-15 → 2011-08-18 (+3d) | 2011-08-22 → 2011-08-25 (+3d) | 5d → 5.5d |  |  |  |
| 56 | **Proveedores seleccionados** | 2011-08-15 → 2011-08-18 (+3d) | 2011-08-16 → 2011-08-19 (+3d) | 1d → 1.5d |  |  |  |
| 57 | Realizar evaluación de costos | 2011-08-15 → 2011-08-18 (+3d) | 2011-08-16 → 2011-08-18 (+2d) |  |  |  |  |
| 58 | Analizar tiempo de entrega | 2011-08-15 → 2011-08-19 (+4d) | 2011-08-15 → 2011-08-19 (+4d) |  | 0.75d → 0d | 43 → 57 |  |
| 59 | Evaluar reputación de proveedor | 2011-08-15 → 2011-08-19 (+4d) | 2011-08-15 → 2011-08-19 (+4d) |  | 0.75d → 0d | 43 → 58 |  |
| 60 | **Pedidos enviados** | 2011-08-16 → 2011-08-19 (+3d) | 2011-08-22 → 2011-08-25 (+3d) |  |  |  |  |
| 61 | Confeccionar ordenes de compra | 2011-08-16 → 2011-08-19 (+3d) | 2011-08-17 → 2011-08-22 (+5d) |  |  |  |  |
| 62 | Realizar pedidos de compra a proveedores | 2011-08-17 → 2011-08-22 (+5d) | 2011-08-22 → 2011-08-25 (+3d) |  |  |  |  |
| 63 | **Plan de logística** | 2011-08-22 → 2011-08-25 (+3d) | 2012-01-16 → 2012-01-31 (+15d) | 104.71d → 113.21d |  |  |  |
| 64 | **Depósito alquilado** | 2011-08-22 → 2011-08-25 (+3d) | 2011-09-01 → 2011-09-06 (+5d) |  | 29.5d → 0d |  |  |
| 65 | Confeccionar requerimientos de infraestructura | 2011-08-22 → 2011-08-25 (+3d) | 2011-08-22 → 2011-08-25 (+3d) |  | 29.5d → 0d |  |  |
| 66 | Seleccionar depósito | 2011-08-22 → 2011-08-26 (+4d) | 2011-08-25 → 2011-08-30 (+5d) |  | 29.5d → 0d |  |  |
| 67 | Alquilar depósito | 2011-08-25 → 2011-08-31 (+6d) | 2011-09-01 → 2011-09-06 (+5d) |  | 29.5d → 0d |  |  |
| 68 | Contratar servicio de seguridad | 2011-08-25 → 2011-08-31 (+6d) | 2011-09-01 → 2011-09-06 (+5d) |  | 29.5d → 0d |  |  |
| 69 | **Equipamientos y materiales recibidos** | 2011-08-22 → 2011-09-07 (+16d) | 2011-10-17 → 2011-11-01 (+15d) |  |  | 62 → 64 |  |
| 70 | Recibir equipamientos y materiales | 2011-08-22 → 2011-09-07 (+16d) | 2011-09-19 → 2011-10-04 (+15d) |  |  |  |  |
| 71 | Controlar equipamientos y materiales | 2011-09-19 → 2011-10-05 (+16d) | 2011-09-26 → 2011-10-11 (+15d) |  |  |  |  |
| 72 | Catalogar equipamientos y materiales | 2011-09-26 → 2011-10-12 (+16d) | 2011-10-10 → 2011-10-25 (+15d) |  |  |  |  |
| 73 | Almacenar equipamientos y materiales | 2011-10-10 → 2011-10-26 (+16d) | 2011-10-17 → 2011-11-01 (+15d) |  |  |  |  |

| ID | Task | Start | Finish | Duration | Total float | Other |
| --- | --- | --- | --- | --- | --- | --- |
| 74 | **Equipos informáticos configurados** | 2011-09-01 → 2011-09-07 (+6d) | 2011-11-04 → 2011-11-22 (+18d) | 45.61d → 54.11d |  |  |
| 75 | Montar infraestructura del laboratorio | 2011-09-01 → 2011-09-07 (+6d) | 2011-09-05 → 2011-09-08 (+3d) |  | 29.5d → 38d |  |
| 76 | **Servidores configurados** | 2011-10-17 → 2011-11-02 (+16d) | 2011-10-27 → 2011-11-14 (+18d) |  |  |  |
| 77 | Preparar paquete de software | 2011-10-17 → 2011-11-02 (+16d) | 2011-10-17 → 2011-11-02 (+16d) |  |  | resources Ing Lucas Faule → Asistente Instalacion1 |
| 78 | Instalar paquete de software | 2011-10-17 → 2011-11-02 (+16d) | 2011-10-19 → 2011-11-04 (+16d) |  |  | resources Ing Lucas Faule → Asistente Instalacion1 |
| 79 | Testear servidor | 2011-10-19 → 2011-11-04 (+16d) | 2011-10-21 → 2011-11-08 (+18d) |  |  | resources Ing Lucas Faule → Asistente Instalacion1 |
| 80 | Clonar servidores | 2011-10-21 → 2011-11-08 (+18d) | 2011-10-27 → 2011-11-14 (+18d) |  |  | resources Asistente Instalacion1; Asistente Instalacion2; Asistente Instalacion3; Asistente Instalacion4; Asistente Instalacion5 → Asistente Instalacion1; Asistente Instalacion2; Asistente Instalacion3; Asistente Instalacion4; Asistente Instalacion5; Asistente Instalacion6; Asistente Instalacion7; Asistente Instalacion8; Asistente Instalacion9; Asistente Instalacion10 |
| 81 | **PC's configuradas** | 2011-10-17 → 2011-11-02 (+16d) | 2011-11-04 → 2011-11-22 (+18d) |  |  |  |
| 82 | Preparar paquete de software | 2011-10-17 → 2011-11-02 (+16d) | 2011-10-17 → 2011-11-02 (+16d) |  |  | resources Ing Lucas Faule → Asistente Instalacion11 |
| 83 | Instalar paquete de software | 2011-10-17 → 2011-11-02 (+16d) | 2011-10-19 → 2011-11-04 (+16d) |  |  | resources Ing Lucas Faule → Asistente Instalacion12 |
| 84 | Testear PC | 2011-10-19 → 2011-11-04 (+16d) | 2011-10-21 → 2011-11-08 (+18d) |  |  | resources Ing Lucas Faule → Asistente Instalacion11 |
| 85 | Clonar PC's | 2011-10-21 → 2011-11-08 (+18d) | 2011-11-04 → 2011-11-22 (+18d) |  |  | resources Asistente Instalacion1; Asistente Instalacion2; Asistente Instalacion3; Asistente Instalacion4; Asistente Instalacion5; Asistente Instalacion6; Asistente Instalacion7; Asistente Instalacion8; Asistente Instalacion9; Asistente Instalacion10 → Asistente Instalacion11; Asistente Instalacion12; Asistente Instalacion13; Asistente Instalacion14; Asistente Instalacion15; Asistente Instalacion16; Asistente Instalacion17; Asistente Instalacion18; Asistente Instalacion19; Asistente Instalacion20 |
| 86 | **Embalaje realizado** | 2011-10-17 → 2011-11-02 (+16d) | 2011-11-15 → 2011-12-01 (+16d) |  |  |  |
| 87 | **Seleccionar equipos** | 2011-10-17 → 2011-11-02 (+16d) | 2011-10-19 → 2011-11-04 (+16d) |  |  |  |
| 88 | Seleccionar equipos Capital (20 centros) | 2011-10-17 → 2011-11-02 (+16d) | 2011-10-19 → 2011-11-04 (+16d) |  |  |  |
| 89 | Seleccionar equipos Interior (20 centros) | 2011-10-17 → 2011-11-02 (+16d) | 2011-10-19 → 2011-11-04 (+16d) |  |  |  |
| 90 | **Asignar centro educativo** | 2011-10-19 → 2011-11-04 (+16d) | 2011-10-21 → 2011-11-07 (+17d) |  |  |  |
| 91 | Asignar centro educativo Capital (20 centros) | 2011-10-19 → 2011-11-04 (+16d) | 2011-10-21 → 2011-11-07 (+17d) |  |  |  |
| 92 | Asignar centro educativo Interior (20 centros) | 2011-10-19 → 2011-11-04 (+16d) | 2011-10-21 → 2011-11-07 (+17d) |  |  |  |
| 93 | **Embalar equipamiento** | 2011-11-04 → 2011-11-22 (+18d) | 2011-11-11 → 2011-11-29 (+18d) |  |  |  |
| 94 | Embalar Equipamiento Capital (20 centros) | 2011-11-04 → 2011-11-22 (+18d) | 2011-11-11 → 2011-11-29 (+18d) |  |  |  |
| 95 | Embalar Equipamiento Interior (20 centros) | 2011-11-04 → 2011-11-22 (+18d) | 2011-11-11 → 2011-11-29 (+18d) |  |  |  |
| 96 | **Controlar equipamiento** | 2011-11-11 → 2011-11-29 (+18d) | 2011-11-15 → 2011-12-01 (+16d) |  |  |  |
| 97 | Controlar Equipamiento Capital (20 centros) | 2011-11-11 → 2011-11-29 (+18d) | 2011-11-15 → 2011-12-01 (+16d) |  |  |  |
| 98 | Controlar Equipamiento Interior (20 centros) | 2011-11-11 → 2011-11-29 (+18d) | 2011-11-15 → 2011-12-01 (+16d) |  |  |  |
| 99 | **Equipamientos y materiales entregados** | 2011-11-11 → 2011-11-29 (+18d) | 2012-01-16 → 2012-01-31 (+15d) |  |  |  |
| 100 | Seleccionar servicio de transporte | 2011-11-11 → 2011-11-29 (+18d) | 2011-11-18 → 2011-12-06 (+18d) |  |  |  |
| 101 | **Hoja de ruta definida** | 2011-11-18 → 2011-12-06 (+18d) | 2011-12-02 → 2011-12-20 (+18d) |  |  |  |
| 102 | Confeccionar hoja de ruta | 2011-11-18 → 2011-12-06 (+18d) | 2011-11-25 → 2011-12-13 (+18d) |  |  |  |
| 103 | Gestionar hoja de ruta | 2011-11-25 → 2011-12-13 (+18d) | 2011-12-02 → 2011-12-20 (+18d) |  |  |  |
| 104 | **Cargar equipamiento y materiales** | 2011-12-02 → 2011-12-20 (+18d) | 2011-12-21 → 2012-01-06 (+16d) |  |  |  |
| 105 | Cargar equipamientos y materiales Interior (20 centros) | 2011-12-02 → 2011-12-20 (+18d) | 2011-12-12 → 2011-12-28 (+16d) |  |  |  |
| 106 | Cargar equipamiento y materiales Capital (20 centros) | 2011-12-12 → 2011-12-28 (+16d) | 2011-12-21 → 2012-01-06 (+16d) |  |  |  |
| 107 | **Transportar equipamientos y materiales** | 2011-12-21 → 2012-01-06 (+16d) | 2012-01-03 → 2012-01-18 (+15d) |  |  |  |
| 108 | Transportar equipamientos y materiales Interior (20 centros) | 2011-12-21 → 2012-01-06 (+16d) | 2011-12-28 → 2012-01-12 (+15d) |  |  |  |
| 109 | Transportar equipamiento y materiales Capital (20 centros) | 2011-12-28 → 2012-01-12 (+15d) | 2012-01-03 → 2012-01-18 (+15d) |  |  |  |
| 110 | **Descargar equipamientos y materiales** | 2012-01-03 → 2012-01-18 (+15d) | 2012-01-11 → 2012-01-27 (+16d) |  |  |  |
| 111 | Descargar equipamientos y materiales Interior (20 centros) | 2012-01-03 → 2012-01-18 (+15d) | 2012-01-06 → 2012-01-24 (+18d) |  |  |  |
| 112 | Descargar equipamiento y materiales Capital (20 centros) | 2012-01-06 → 2012-01-24 (+18d) | 2012-01-11 → 2012-01-27 (+16d) |  |  |  |
| 113 | **Controlar equipamientos y materiales** | 2012-01-11 → 2012-01-27 (+16d) | 2012-01-16 → 2012-01-31 (+15d) |  |  |  |
| 114 | Controlar equipamientos y materiales Interior (20 centros) | 2012-01-11 → 2012-01-27 (+16d) | 2012-01-12 → 2012-01-30 (+18d) |  |  |  |
| 115 | Controlar equipamiento y materiales Capital (20 centros) | 2012-01-12 → 2012-01-30 (+18d) | 2012-01-16 → 2012-01-31 (+15d) |  |  |  |
| 116 | **Centros de capacitación instalados** | 2012-01-16 → 2012-01-31 (+15d) | 2012-02-13 → 2012-02-28 (+15d) |  |  |  |
| 117 | **Infraestructura instalada** | 2012-01-16 → 2012-01-31 (+15d) | 2012-02-13 → 2012-02-28 (+15d) |  |  |  |
| 118 | Montar mobiliario | 2012-01-16 → 2012-01-31 (+15d) | 2012-02-01 → 2012-02-16 (+15d) |  |  |  |
| 119 | Realizar instalación eléctrica | 2012-01-16 → 2012-01-31 (+15d) | 2012-02-01 → 2012-02-16 (+15d) |  |  | resources Asistente Instalacion11; Asistente Instalacion12; Asistente Instalacion13; Asistente Instalacion14; Asistente Instalacion15; Asistente Instalacion16; Asistente Instalacion17; Asistente Instalacion18; Asistente Instalacion19; Asistente Instalacion20 → Electricista Instalacion1; Electricista Instalacion2; Electricista Instalacion3; Electricista Instalacion4; Electricista Instalacion5; Electricista Instalacion6; Electricista Instalacion7; Electricista Instalacion8; Electricista Instalacion9; Electricista Instalacion10 |
| 120 | Realizar cableado estructurado | 2012-01-16 → 2012-01-31 (+15d) | 2012-02-01 → 2012-02-16 (+15d) |  |  | resources Asistente Instalacion21; Asistente Instalacion22; Asistente Instalacion23; Asistente Instalacion24; Asistente Instalacion25; Asistente Instalacion26; Asistente Instalacion27; Asistente Instalacion28; Asistente Instalacion29; Asistente Instalacion30 → Tecnico Instalacion 01; Tecnico Instalacion 02; Tecnico Instalacion 03; Tecnico Instalacion 04; Tecnico Instalacion 05; Tecnico Instalacion 06; Tecnico Instalacion 07; Tecnico Instalacion 08; Tecnico Instalacion 09; Tecnico Instalacion 10 |
| 121 | Instalación y configuración de acceso a internet | 2012-02-01 → 2012-02-16 (+15d) | 2012-02-13 → 2012-02-28 (+15d) |  |  |  |
| 122 | Configuración de equipos informáticos en red de datos | 2012-02-01 → 2012-02-16 (+15d) | 2012-02-13 → 2012-02-28 (+15d) |  |  |  |
| 123 | **Docentes capacitados** | 2011-07-14 → 2011-08-02 (+19d) | 2011-10-12 → 2011-12-09 (+58d) | 64.38d → 92.67d | 87.71d → 57.55d |  |
| 124 | **Capacitadores seleccionados** | 2011-07-14 → 2011-08-12 (+29d) | 2011-07-26 → 2011-08-22 (+27d) | 8.5d → 6d | 97.09d → 57.55d |  |
| 125 | Confeccionar método de selección | 2011-07-14 → 2011-08-12 (+29d) | 2011-07-14 → 2011-08-15 (+32d) |  | 97.09d → 57.55d |  |
| 126 | Comunicar a instituciones educativas | 2011-07-15 → 2011-08-15 (+31d) | 2011-07-19 → 2011-08-18 (+30d) |  | 97.09d → 57.55d | resources Capacitador1; Capacitador2; Capacitador3; Capacitador4 → Capacitador2; Capacitador3; Capacitador4; Capacitador1 |
| 127 | Evaluar capacitadores | 2011-07-19 → 2011-08-18 (+30d) | 2011-07-26 → 2011-08-22 (+27d) | 40h → 20h | 97.09d → 57.55d | resources Capacitador1; Capacitador2 → Capacitador1; Capacitador2; Capacitador3; Capacitador4 |
| 128 | **Programa de contenidos** | 2011-07-26 → 2011-08-22 (+27d) | 2011-08-04 → 2011-09-01 (+28d) |  | 97.09d → 57.55d |  |
| 129 | Definir objetivos específicos | 2011-07-26 → 2011-08-22 (+27d) | 2011-07-27 → 2011-08-23 (+27d) |  | 97.09d → 57.55d |  |
| 130 | Confeccionar temario | 2011-07-27 → 2011-08-23 (+27d) | 2011-07-28 → 2011-08-24 (+27d) |  | 97.09d → 57.55d |  |
| 131 | Confeccionar actividades | 2011-07-28 → 2011-08-24 (+27d) | 2011-07-29 → 2011-08-25 (+27d) |  | 97.09d → 57.55d |  |
| 132 | Establecer duración y método de capacitación | 2011-07-29 → 2011-08-25 (+27d) | 2011-08-01 → 2011-08-26 (+25d) |  | 97.09d → 57.55d |  |
| 133 | Definir material de estudio | 2011-08-01 → 2011-08-26 (+25d) | 2011-08-02 → 2011-08-29 (+27d) |  | 97.09d → 57.55d |  |
| 134 | Gestionar material de estudio | 2011-08-02 → 2011-08-29 (+27d) | 2011-08-04 → 2011-09-01 (+28d) |  | 97.09d → 57.55d |  |
| 135 | **Docentes seleccionados** | 2011-07-29 → 2011-08-02 (+4d) | 2011-08-18 → 2011-08-10 (-8d) | 13.5d → 6d | 87.71d → 73.21d |  |
| 136 | Confeccionar perfil del docente | 2011-07-29 → 2011-08-02 (+4d) | 2011-08-01 → 2011-08-03 (+2d) |  | 87.71d → 73.21d |  |
| 137 | Comunicar perfil a escuelas | 2011-08-01 → 2011-08-03 (+2d) | 2011-08-04 → 2011-08-05 (+1d) |  | 87.71d → 73.21d |  |
| 138 | Evaluar docentes | 2011-08-04 → 2011-08-08 (+4d) | 2011-08-18 → 2011-08-10 (-8d) | 80h → 20h | 87.71d → 73.21d | resources Capacitador1 → Capacitador1; Capacitador2; Capacitador3; Capacitador4 |
| 139 | **Capacitación docente** | 2011-08-18 → 2011-09-01 (+14d) | 2011-10-12 → 2011-12-09 (+58d) | 39d → 71d | 87.71d → 57.55d |  |
| 140 | **Capacitación centralizada** | 2011-08-18 → 2011-09-01 (+14d) | 2011-10-12 → 2011-10-26 (+14d) |  | 87.71d → 57.55d |  |
| 141 | Construir cronograma de llegada y estadía de docentes | 2011-08-18 → 2011-09-01 (+14d) | 2011-08-25 → 2011-09-08 (+14d) |  | 87.71d → 57.55d |  |
| 142 | Preparar alojamiento de los docentes | 2011-08-25 → 2011-09-08 (+14d) | 2011-09-08 → 2011-09-22 (+14d) |  | 87.71d → 57.55d |  |
| 143 | Coordinar llegada de docentes | 2011-09-08 → 2011-09-22 (+14d) | 2011-09-14 → 2011-09-28 (+14d) |  | 87.71d → 57.55d |  |

| ID | Task | Start | Finish | Total float | Predecessors |
| --- | --- | --- | --- | --- | --- |
| 144 | Dictar capacitación | 2011-09-14 → 2011-09-28 (+14d) | 2011-09-28 → 2011-10-12 (+14d) | 87.71d → 57.55d |  |
| 145 | Plantear plan de acción a implementar | 2011-09-28 → 2011-10-12 (+14d) | 2011-10-12 → 2011-10-26 (+14d) | 87.71d → 57.55d |  |
| 146 | **Capacitación itinerante** | 2011-08-18 → 2011-10-26 (+69d) | 2011-10-03 → 2011-12-09 (+67d) | 94.71d → 57.55d | none → 140 |
| 147 | Coordinar cronograma de visitas | 2011-08-18 → 2011-10-26 (+69d) | 2011-08-26 → 2011-11-03 (+69d) | 94.71d → 57.55d |  |
| 148 | Gestionar visita de los capacitadores | 2011-08-26 → 2011-11-03 (+69d) | 2011-09-05 → 2011-11-11 (+67d) | 94.71d → 57.55d |  |
| 149 | Dictar capacitación | 2011-09-05 → 2011-11-11 (+67d) | 2011-09-19 → 2011-11-25 (+67d) | 94.71d → 57.55d |  |
| 150 | Presentar plan de acción | 2011-09-19 → 2011-11-25 (+67d) | 2011-10-03 → 2011-12-09 (+67d) | 94.71d → 57.55d |  |

## Version 3 (saved 2011-08-08)

Note of the change: Corrección módulo Alejandra.

Last finish 2012-02-28 → 2012-01-24 (-35d).

Changed:

| ID | Task | Start | Finish | Duration | Total float |
| --- | --- | --- | --- | --- | --- |
| 1 | **ICCI** |  | 2012-02-28 → 2012-01-24 (-35d) | 188.71d → 163.09d |  |
| 13 | **Centros de capacitación seleccionados** |  | 2011-08-02 → 2011-06-27 (-36d) | 38.5d → 12.88d |  |
| 14 | **Informe de especificaciones y requerimientos generales** |  | 2011-06-22 → 2011-06-20 (-2d) | 4.12d → 2.5d |  |
| 16 | Realizar informe de especificaciones y requerimientos generales |  | 2011-06-22 → 2011-06-20 (-2d) | 26h → 13h |  |
| 17 | **Centros de capital seleccionados** | 2011-06-22 → 2011-06-20 (-2d) | 2011-07-05 → 2011-06-22 (-13d) | 9.75d → 1.88d | 19.62d → 3.5d |
| 18 | Solicitar los 20 centros definidos por Gobierno | 2011-06-22 → 2011-06-20 (-2d) | 2011-06-22 → 2011-06-20 (-2d) | 6h → 3h | 19.62d → 3.5d |
| 19 | Inspeccionar centros | 2011-06-22 → 2011-06-20 (-2d) | 2011-07-05 → 2011-06-22 (-13d) | 72h → 12h | 19.62d → 3.5d |
| 20 | **Centros interior seleccionados** |  | 2011-08-02 → 2011-06-27 (-36d) | 38.5d → 12.88d |  |
| 21 | **Localidades propuestas** |  | 2011-06-29 → 2011-06-22 (-7d) | 14.75d → 9.38d |  |
| 23 | Analizar y seleccionar 30 localidades | 2011-06-22 → 2011-06-20 (-2d) | 2011-06-29 → 2011-06-21 (-8d) | 40h → 10h |  |
| 24 | Realizar propuesta de localidades seleccionadas | 2011-06-29 → 2011-06-21 (-8d) | 2011-06-29 → 2011-06-22 (-7d) |  |  |
| 25 | **Centros candidatos** | 2011-06-29 → 2011-06-22 (-7d) | 2011-08-02 → 2011-06-27 (-36d) | 23.75d → 3.5d |  |
| 26 | Inspeccionar centros seleccionados | 2011-06-29 → 2011-06-22 (-7d) | 2011-08-01 → 2011-06-24 (-38d) | 180h → 18h |  |
| 27 | Notificar selección al colegio | 2011-08-01 → 2011-06-24 (-38d) | 2011-08-02 → 2011-06-27 (-36d) |  |  |
| 28 | **Equipamiento comprado** | 2011-08-02 → 2011-06-27 (-36d) | 2011-08-25 → 2011-07-20 (-36d) |  |  |
| 29 | **Planificación de requerimientos de compras** | 2011-08-02 → 2011-06-27 (-36d) | 2011-08-08 → 2011-07-01 (-38d) |  |  |
| 30 | **Políticas de compra establecidas** | 2011-08-02 → 2011-06-27 (-36d) | 2011-08-04 → 2011-06-29 (-36d) |  |  |
| 31 | **Parámetros de costo establecidos** | 2011-08-02 → 2011-06-27 (-36d) | 2011-08-04 → 2011-06-29 (-36d) |  |  |
| 32 | Confeccionar parametrización de costo de infraestructura | 2011-08-02 → 2011-06-27 (-36d) | 2011-08-02 → 2011-06-28 (-35d) |  |  |
| 33 | Confeccionar parametrización de costo de mobiliario | 2011-08-02 → 2011-06-27 (-36d) | 2011-08-03 → 2011-06-28 (-36d) |  |  |
| 34 | Parámetros de disponibilidad establecidos | 2011-08-02 → 2011-06-27 (-36d) | 2011-08-04 → 2011-06-29 (-36d) |  |  |
| 35 | **Parámetros de cantidad establecidos** | 2011-08-02 → 2011-06-27 (-36d) | 2011-08-02 → 2011-06-28 (-35d) |  |  |
| 36 | Confeccionar parametrización de equipamiento informático | 2011-08-02 → 2011-06-27 (-36d) | 2011-08-02 → 2011-06-28 (-35d) |  |  |
| 37 | Confeccionar parametrización de mobiliario | 2011-08-02 → 2011-06-27 (-36d) | 2011-08-02 → 2011-06-28 (-35d) |  |  |
| 38 | Parámetros de garantia establecidos | 2011-08-02 → 2011-06-27 (-36d) | 2011-08-02 → 2011-06-28 (-35d) |  |  |
| 39 | **Informes técnicos aprobados** | 2011-08-04 → 2011-06-29 (-36d) | 2011-08-08 → 2011-07-01 (-38d) |  |  |
| 40 | Realizar informe de pedido de equipamiento informático | 2011-08-04 → 2011-06-29 (-36d) | 2011-08-05 → 2011-06-30 (-36d) |  |  |
| 41 | Realizar informe de pedido de mobiliario | 2011-08-05 → 2011-06-30 (-36d) | 2011-08-08 → 2011-07-01 (-38d) |  |  |
| 42 | Verificar cobertura de requerimientos | 2011-08-05 → 2011-06-30 (-36d) | 2011-08-05 → 2011-07-01 (-35d) |  |  |
| 43 | **Cotizaciones solicitadas** | 2011-08-08 → 2011-07-01 (-38d) | 2011-08-17 → 2011-07-13 (-35d) |  |  |
| 44 | **Pedido de cotización confeccionado** | 2011-08-08 → 2011-07-01 (-38d) | 2011-08-12 → 2011-07-08 (-35d) |  |  |
| 45 | Confeccionar pedido de cotización de hardware | 2011-08-08 → 2011-07-01 (-38d) | 2011-08-11 → 2011-07-06 (-36d) |  |  |
| 46 | Confeccionar pedido de cotización de software | 2011-08-08 → 2011-07-01 (-38d) | 2011-08-11 → 2011-07-06 (-36d) |  |  |
| 47 | Confeccionar pedido de cotización de insumos | 2011-08-08 → 2011-07-01 (-38d) | 2011-08-12 → 2011-07-08 (-35d) |  |  |
| 48 | Confeccionar pedido de cotización de mobiliario | 2011-08-08 → 2011-07-01 (-38d) | 2011-08-08 → 2011-07-04 (-35d) |  |  |
| 49 | **Pedido de cotizaciones enviadas** | 2011-08-15 → 2011-07-08 (-38d) | 2011-08-17 → 2011-07-13 (-35d) |  |  |
| 50 | Seleccionar proveedores propuestos | 2011-08-15 → 2011-07-08 (-38d) | 2011-08-17 → 2011-07-13 (-35d) |  |  |
| 51 | Enviar pedido de cotización de hardware | 2011-08-15 → 2011-07-08 (-38d) | 2011-08-15 → 2011-07-11 (-35d) |  |  |
| 52 | Enviar pedido de cotización de software | 2011-08-15 → 2011-07-08 (-38d) | 2011-08-15 → 2011-07-11 (-35d) |  |  |
| 53 | Enviar pedido de cotización de insumos | 2011-08-15 → 2011-07-08 (-38d) | 2011-08-15 → 2011-07-08 (-38d) |  |  |
| 54 | Enviar pedido de cotización de mobiliario | 2011-08-15 → 2011-07-08 (-38d) | 2011-08-15 → 2011-07-08 (-38d) |  |  |
| 55 | **Pedidos realizados** | 2011-08-18 → 2011-07-13 (-36d) | 2011-08-25 → 2011-07-20 (-36d) |  |  |
| 56 | **Proveedores seleccionados** | 2011-08-18 → 2011-07-13 (-36d) | 2011-08-19 → 2011-07-14 (-36d) |  |  |
| 57 | Realizar evaluación de costos | 2011-08-18 → 2011-07-13 (-36d) | 2011-08-18 → 2011-07-14 (-35d) |  |  |
| 58 | Analizar tiempo de entrega | 2011-08-19 → 2011-07-14 (-36d) | 2011-08-19 → 2011-07-14 (-36d) |  |  |
| 59 | Evaluar reputación de proveedor | 2011-08-19 → 2011-07-14 (-36d) | 2011-08-19 → 2011-07-14 (-36d) |  |  |
| 60 | **Pedidos enviados** | 2011-08-19 → 2011-07-14 (-36d) | 2011-08-25 → 2011-07-20 (-36d) |  |  |
| 61 | Confeccionar ordenes de compra | 2011-08-19 → 2011-07-14 (-36d) | 2011-08-22 → 2011-07-15 (-38d) |  |  |
| 62 | Realizar pedidos de compra a proveedores | 2011-08-22 → 2011-07-15 (-38d) | 2011-08-25 → 2011-07-20 (-36d) |  |  |
| 63 | **Plan de logística** | 2011-08-25 → 2011-07-20 (-36d) | 2012-01-31 → 2011-12-27 (-35d) |  |  |
| 64 | **Depósito alquilado** | 2011-08-25 → 2011-07-20 (-36d) | 2011-09-06 → 2011-08-02 (-35d) |  |  |
| 65 | Confeccionar requerimientos de infraestructura | 2011-08-25 → 2011-07-20 (-36d) | 2011-08-25 → 2011-07-21 (-35d) |  |  |
| 66 | Seleccionar depósito | 2011-08-26 → 2011-07-21 (-36d) | 2011-08-30 → 2011-07-26 (-35d) |  |  |
| 67 | Alquilar depósito | 2011-08-31 → 2011-07-26 (-36d) | 2011-09-06 → 2011-08-02 (-35d) |  |  |
| 68 | Contratar servicio de seguridad | 2011-08-31 → 2011-07-26 (-36d) | 2011-09-06 → 2011-08-02 (-35d) |  |  |
| 69 | **Equipamientos y materiales recibidos** | 2011-09-07 → 2011-08-02 (-36d) | 2011-11-01 → 2011-09-27 (-35d) |  |  |
| 70 | Recibir equipamientos y materiales | 2011-09-07 → 2011-08-02 (-36d) | 2011-10-04 → 2011-08-30 (-35d) |  |  |
| 71 | Controlar equipamientos y materiales | 2011-10-05 → 2011-08-30 (-36d) | 2011-10-11 → 2011-09-06 (-35d) |  |  |
| 72 | Catalogar equipamientos y materiales | 2011-10-12 → 2011-09-06 (-36d) | 2011-10-25 → 2011-09-20 (-35d) |  |  |
| 73 | Almacenar equipamientos y materiales | 2011-10-26 → 2011-09-20 (-36d) | 2011-11-01 → 2011-09-27 (-35d) |  |  |
| 74 | **Equipos informáticos configurados** | 2011-09-07 → 2011-08-02 (-36d) | 2011-11-22 → 2011-10-17 (-36d) |  |  |
| 75 | Montar infraestructura del laboratorio | 2011-09-07 → 2011-08-02 (-36d) | 2011-09-08 → 2011-08-04 (-35d) |  |  |
| 76 | **Servidores configurados** | 2011-11-02 → 2011-09-27 (-36d) | 2011-11-14 → 2011-10-07 (-38d) |  |  |
| 77 | Preparar paquete de software | 2011-11-02 → 2011-09-27 (-36d) | 2011-11-02 → 2011-09-27 (-36d) |  |  |
| 78 | Instalar paquete de software | 2011-11-02 → 2011-09-27 (-36d) | 2011-11-04 → 2011-09-29 (-36d) |  |  |
| 79 | Testear servidor | 2011-11-04 → 2011-09-29 (-36d) | 2011-11-08 → 2011-10-03 (-36d) |  |  |
| 80 | Clonar servidores | 2011-11-08 → 2011-10-03 (-36d) | 2011-11-14 → 2011-10-07 (-38d) |  |  |
| 81 | **PC's configuradas** | 2011-11-02 → 2011-09-27 (-36d) | 2011-11-22 → 2011-10-17 (-36d) |  |  |
| 82 | Preparar paquete de software | 2011-11-02 → 2011-09-27 (-36d) | 2011-11-02 → 2011-09-27 (-36d) |  |  |
| 83 | Instalar paquete de software | 2011-11-02 → 2011-09-27 (-36d) | 2011-11-04 → 2011-09-29 (-36d) |  |  |

| ID | Task | Start | Finish | Duration | Total float |
| --- | --- | --- | --- | --- | --- |
| 84 | Testear PC | 2011-11-04 → 2011-09-29 (-36d) | 2011-11-08 → 2011-10-03 (-36d) |  |  |
| 85 | Clonar PC's | 2011-11-08 → 2011-10-03 (-36d) | 2011-11-22 → 2011-10-17 (-36d) |  |  |
| 86 | **Embalaje realizado** | 2011-11-02 → 2011-09-27 (-36d) | 2011-12-01 → 2011-10-26 (-36d) |  |  |
| 87 | **Seleccionar equipos** | 2011-11-02 → 2011-09-27 (-36d) | 2011-11-04 → 2011-09-29 (-36d) |  |  |
| 88 | Seleccionar equipos Capital (20 centros) | 2011-11-02 → 2011-09-27 (-36d) | 2011-11-04 → 2011-09-29 (-36d) |  |  |
| 89 | Seleccionar equipos Interior (20 centros) | 2011-11-02 → 2011-09-27 (-36d) | 2011-11-04 → 2011-09-29 (-36d) |  |  |
| 90 | **Asignar centro educativo** | 2011-11-04 → 2011-09-29 (-36d) | 2011-11-07 → 2011-10-03 (-35d) |  |  |
| 91 | Asignar centro educativo Capital (20 centros) | 2011-11-04 → 2011-09-29 (-36d) | 2011-11-07 → 2011-10-03 (-35d) |  |  |
| 92 | Asignar centro educativo Interior (20 centros) | 2011-11-04 → 2011-09-29 (-36d) | 2011-11-07 → 2011-10-03 (-35d) |  |  |
| 93 | **Embalar equipamiento** | 2011-11-22 → 2011-10-17 (-36d) | 2011-11-29 → 2011-10-24 (-36d) |  |  |
| 94 | Embalar Equipamiento Capital (20 centros) | 2011-11-22 → 2011-10-17 (-36d) | 2011-11-29 → 2011-10-24 (-36d) |  |  |
| 95 | Embalar Equipamiento Interior (20 centros) | 2011-11-22 → 2011-10-17 (-36d) | 2011-11-29 → 2011-10-24 (-36d) |  |  |
| 96 | **Controlar equipamiento** | 2011-11-29 → 2011-10-24 (-36d) | 2011-12-01 → 2011-10-26 (-36d) |  |  |
| 97 | Controlar Equipamiento Capital (20 centros) | 2011-11-29 → 2011-10-24 (-36d) | 2011-12-01 → 2011-10-26 (-36d) |  |  |
| 98 | Controlar Equipamiento Interior (20 centros) | 2011-11-29 → 2011-10-24 (-36d) | 2011-12-01 → 2011-10-26 (-36d) |  |  |
| 99 | **Equipamientos y materiales entregados** | 2011-11-29 → 2011-10-24 (-36d) | 2012-01-31 → 2011-12-27 (-35d) |  |  |
| 100 | Seleccionar servicio de transporte | 2011-11-29 → 2011-10-24 (-36d) | 2011-12-06 → 2011-10-31 (-36d) |  |  |
| 101 | **Hoja de ruta definida** | 2011-12-06 → 2011-10-31 (-36d) | 2011-12-20 → 2011-11-14 (-36d) |  |  |
| 102 | Confeccionar hoja de ruta | 2011-12-06 → 2011-10-31 (-36d) | 2011-12-13 → 2011-11-07 (-36d) |  |  |
| 103 | Gestionar hoja de ruta | 2011-12-13 → 2011-11-07 (-36d) | 2011-12-20 → 2011-11-14 (-36d) |  |  |
| 104 | **Cargar equipamiento y materiales** | 2011-12-20 → 2011-11-14 (-36d) | 2012-01-06 → 2011-12-01 (-36d) |  |  |
| 105 | Cargar equipamientos y materiales Interior (20 centros) | 2011-12-20 → 2011-11-14 (-36d) | 2011-12-28 → 2011-11-22 (-36d) |  |  |
| 106 | Cargar equipamiento y materiales Capital (20 centros) | 2011-12-28 → 2011-11-22 (-36d) | 2012-01-06 → 2011-12-01 (-36d) |  |  |
| 107 | **Transportar equipamientos y materiales** | 2012-01-06 → 2011-12-01 (-36d) | 2012-01-18 → 2011-12-14 (-35d) |  |  |
| 108 | Transportar equipamientos y materiales Interior (20 centros) | 2012-01-06 → 2011-12-01 (-36d) | 2012-01-12 → 2011-12-08 (-35d) |  |  |
| 109 | Transportar equipamiento y materiales Capital (20 centros) | 2012-01-12 → 2011-12-08 (-35d) | 2012-01-18 → 2011-12-14 (-35d) |  |  |
| 110 | **Descargar equipamientos y materiales** | 2012-01-18 → 2011-12-14 (-35d) | 2012-01-27 → 2011-12-22 (-36d) |  |  |
| 111 | Descargar equipamientos y materiales Interior (20 centros) | 2012-01-18 → 2011-12-14 (-35d) | 2012-01-24 → 2011-12-19 (-36d) |  |  |
| 112 | Descargar equipamiento y materiales Capital (20 centros) | 2012-01-24 → 2011-12-19 (-36d) | 2012-01-27 → 2011-12-22 (-36d) |  |  |
| 113 | **Controlar equipamientos y materiales** | 2012-01-27 → 2011-12-22 (-36d) | 2012-01-31 → 2011-12-27 (-35d) |  |  |
| 114 | Controlar equipamientos y materiales Interior (20 centros) | 2012-01-27 → 2011-12-22 (-36d) | 2012-01-30 → 2011-12-23 (-38d) |  |  |
| 115 | Controlar equipamiento y materiales Capital (20 centros) | 2012-01-30 → 2011-12-23 (-38d) | 2012-01-31 → 2011-12-27 (-35d) |  |  |
| 116 | **Centros de capacitación instalados** | 2012-01-31 → 2011-12-27 (-35d) | 2012-02-28 → 2012-01-24 (-35d) |  |  |
| 117 | **Infraestructura instalada** | 2012-01-31 → 2011-12-27 (-35d) | 2012-02-28 → 2012-01-24 (-35d) |  |  |
| 118 | Montar mobiliario | 2012-01-31 → 2011-12-27 (-35d) | 2012-02-16 → 2012-01-12 (-35d) |  |  |
| 119 | Realizar instalación eléctrica | 2012-01-31 → 2011-12-27 (-35d) | 2012-02-16 → 2012-01-12 (-35d) |  |  |
| 120 | Realizar cableado estructurado | 2012-01-31 → 2011-12-27 (-35d) | 2012-02-16 → 2012-01-12 (-35d) |  |  |
| 121 | Instalación y configuración de acceso a internet | 2012-02-16 → 2012-01-12 (-35d) | 2012-02-28 → 2012-01-24 (-35d) |  |  |
| 122 | Configuración de equipos informáticos en red de datos | 2012-02-16 → 2012-01-12 (-35d) | 2012-02-28 → 2012-01-24 (-35d) |  |  |
| 123 | **Docentes capacitados** | 2011-08-02 → 2011-06-27 (-36d) |  | 92.67d → 118.29d | 57.55d → 31.92d |
| 135 | **Docentes seleccionados** | 2011-08-02 → 2011-06-27 (-36d) | 2011-08-10 → 2011-07-05 (-36d) |  |  |
| 136 | Confeccionar perfil del docente | 2011-08-02 → 2011-06-27 (-36d) | 2011-08-03 → 2011-06-28 (-36d) |  |  |
| 137 | Comunicar perfil a escuelas | 2011-08-03 → 2011-06-28 (-36d) | 2011-08-05 → 2011-07-01 (-35d) |  |  |
| 138 | Evaluar docentes | 2011-08-08 → 2011-07-01 (-38d) | 2011-08-10 → 2011-07-05 (-36d) |  |  |
