# WBS

How a schedule from MS Project changed from version to version. A marks actual dates.

## Version 1 (saved 2011-07-22)

| ID | WBS | Task | Duration | Start | Finish | Predecessors | Total float |
| --- | --- | --- | --- | --- | --- | --- | --- |
| 1 | 1 | **ICCI** | 1179.25d | 2011-06-09 | 2015-12-16 |  | 0d |
| 2 | 1.1 | **Planificación y gestión** | 30d | 2011-06-09 | 2011-07-20 |  | 0d |
| 3 | 1.1.1 | **Proyecto gestionado** | 30d | 2011-06-09 | 2011-07-20 |  | 0d |
| 4 |  | Realizar scope statement | 40h | 2011-06-09 | 2011-06-15 |  | 0d |
| 5 |  | Realizar WBS | 40h | 2011-06-16 | 2011-06-22 | 4 | 1169.25d |
| 6 |  | Realizar plan de gestión de riesgos | 80h | 2011-06-16 | 2011-06-29 | 4 | 1164.25d |
| 7 |  | Realizar reuniones de progreso con cliente | 40h | 2011-06-16 | 2011-06-22 | 4 | 1169.25d |
| 8 |  | Realizar reuniones de progreso internas | 200h | 2011-06-16 | 2011-07-20 | 4 | 1149.25d |
| 9 |  | Realizar gestion de tiempo | 80h | 2011-06-16 | 2011-06-29 | 4 | 1007.25d |
| 10 | 1.1.2 | **Personal contratado** | 10d | 2011-06-30 | 2011-07-13 |  | 1007.25d |
| 11 |  | Realizar entrevistas | 40h | 2011-06-30 | 2011-07-06 | 9 | 1007.25d |
| 12 |  | Contratar personal | 40h | 2011-07-07 | 2011-07-13 | 11 | 1007.25d |
| 13 | 1.2 | **Centros de capacitación seleccionados** | 36.88d | 2011-06-09 | 2011-07-29 |  | 0d |
| 14 | 1.2.1 | **Informe de especificaciones y requerimientos generales** | 2.5d | 2011-06-16 | 2011-06-20 | 4 | 0d |
| 15 |  | Establecer especificaciones y requerimientos generales | 7h | 2011-06-16 | 2011-06-16 |  | 0d |
| 16 |  | Realizar informe de especificaciones y requerimientos generales | 13h | 2011-06-16 | 2011-06-20 | 15 | 0d |
| 17 | 1.2.2 | **Centros de capital seleccionados** | 15.38d | 2011-06-20 | 2011-07-11 | 16 | 14d |
| 18 |  | Solicitar los 20 centros definidos por Gobierno | 3h | 2011-06-20 | 2011-06-20 |  | 14d |
| 19 |  | Inspeccionar centros | 120h | 2011-06-20 | 2011-07-11 | 18 | 14d |
| 20 | 1.2.3 | **Centros interior seleccionados** | 36.88d | 2011-06-09 | 2011-07-29 |  | 0d |
| 21 | 1.2.3.1 | **Localidades propuestas** | 13.12d | 2011-06-09 | 2011-06-28 |  | 0d |
| 22 |  | Solicitar al Gobierno información de colegios del interior | 20h | 2011-06-09 | 2011-06-13 |  | 5d |
| 23 |  | Analizar y seleccionar 30 localidades | 40h | 2011-06-20 | 2011-06-27 | 16, 22 | 0d |
| 24 |  | Realizar propuesta de localidades seleccionadas | 5h | 2011-06-27 | 2011-06-28 | 23 | 0d |
| 25 | 1.2.3.2 | **Centros candidatos** | 23.75d | 2011-06-28 | 2011-07-29 | 21 | 0d |
| 26 |  | Inspeccionar centros seleccionados | 180h | 2011-06-28 | 2011-07-28 |  | 0d |
| 27 |  | Notificar selección al colegio | 10h | 2011-07-28 | 2011-07-29 | 26 | 0d |
| 28 | 1.3 | **Equipamiento comprado** | 51.38d | 2011-06-09 | 2011-08-19 |  | 36.88d |
| 29 | 1.3.1 | **Planificación de requerimientos de compras** | 38.88d | 2011-06-09 | 2011-08-02 |  | 36.88d |
| 30 | 1.3.1.1 | **Políticas de compra establecidas** | 37.88d | 2011-06-09 | 2011-08-01 |  | 36.88d |
| 31 | 1.3.1.1.1 | **Parámetros de costo establecidos** | 1d | 2011-07-29 | 2011-08-01 | 13 | 0d |
| 32 |  | Confeccionar parametrización de costo de infraestructura | 8h | 2011-07-29 | 2011-08-01 |  | 0d |
| 33 |  | Confeccionar parametrización de costo de mobiliario | 8h | 2011-07-29 | 2011-08-01 |  | 0d |
| 34 |  | Parámetros de disponibilidad establecidos | 8h | 2011-06-09 | 2011-06-09 |  | 1178.25d |
| 35 | 1.3.1.1.3 | **Parámetros de cantidad establecidos** | 0.5d | 2011-07-29 | 2011-08-01 | 13 | 0.5d |
| 36 |  | Confeccionar parametrización de equipamiento informático | 4h | 2011-07-29 | 2011-08-01 |  | 0.5d |
| 37 |  | Confeccionar parametrización de mobiliario | 4h | 2011-07-29 | 2011-08-01 |  | 0.5d |
| 38 |  | Parámetros de garantia establecidos | 2h | 2011-06-09 | 2011-06-09 |  | 1179d |
| 39 | 1.3.1.2 | **Informes técnicos aprobados** | 1d | 2011-08-01 | 2011-08-02 | 31, 35 | 0d |
| 40 |  | Realizar informe de pedido de equipamiento informático | 8h | 2011-08-01 | 2011-08-02 |  | 0d |
| 41 |  | Realizar informe de pedido de mobiliario | 8h | 2011-08-01 | 2011-08-02 |  | 0d |
| 42 |  | Verificar cobertura de requerimientos | 2h | 2011-08-01 | 2011-08-02 |  | 0.75d |
| 43 | 1.3.2 | **Cotizaciones solicitadas** | 7.5d | 2011-08-02 | 2011-08-12 | 39 | 1d |
| 44 | 1.3.2.1 | **Pedido de cotización confeccionado** | 4.5d | 2011-08-02 | 2011-08-09 |  | 1d |
| 45 |  | Confeccionar pedido de cotización de hardware | 24h | 2011-08-02 | 2011-08-05 |  | 2.5d |
| 46 |  | Confeccionar pedido de cotización de software | 24h | 2011-08-02 | 2011-08-05 |  | 2.5d |
| 47 |  | Confeccionar pedido de cotización de insumos | 36h | 2011-08-02 | 2011-08-09 |  | 1d |
| 48 |  | Confeccionar pedido de cotización de mobiliario | 2h | 2011-08-02 | 2011-08-03 |  | 5.25d |
| 49 | 1.3.2.2 | **Pedido de cotizaciones enviadas** | 3d | 2011-08-09 | 2011-08-12 | 44 | 1d |
| 50 |  | Seleccionar proveedores propuestos | 24h | 2011-08-09 | 2011-08-12 |  | 1d |
| 51 |  | Enviar pedido de cotización de hardware | 6h | 2011-08-09 | 2011-08-10 |  | 3.25d |
| 52 |  | Enviar pedido de cotización de software | 6h | 2011-08-09 | 2011-08-10 |  | 3.25d |
| 53 |  | Enviar pedido de cotización de insumos | 2h | 2011-08-09 | 2011-08-09 |  | 3.75d |
| 54 |  | Enviar pedido de cotización de mobiliario | 2h | 2011-08-09 | 2011-08-09 |  | 3.75d |
| 55 | 1.3.3 | **Pedidos realizados** | 5d | 2011-08-12 | 2011-08-19 | 43 | 1d |
| 56 | 1.3.3.1 | **Proveedores seleccionados** | 1d | 2011-08-12 | 2011-08-15 |  | 1d |
| 57 |  | Realizar evaluación de costos | 8h | 2011-08-12 | 2011-08-15 |  | 1d |
| 58 |  | Analizar tiempo de entrega | 2h | 2011-08-12 | 2011-08-12 |  | 1.75d |
| 59 |  | Evaluar reputación de proveedor | 2h | 2011-08-12 | 2011-08-12 |  | 1.75d |
| 60 | 1.3.3.2 | **Pedidos enviados** | 4d | 2011-08-15 | 2011-08-19 | 56 | 1d |
| 61 |  | Confeccionar ordenes de compra | 8h | 2011-08-15 | 2011-08-16 |  | 1d |
| 62 |  | Realizar pedidos de compra a proveedores | 24h | 2011-08-16 | 2011-08-19 | 61 | 1d |
| 63 | 1.4 | **Plan de logística** | 390.38d | 2011-08-02 | 2013-01-30 |  | 0d |
| 64 | 1.4.1 | **Depósito alquilado** | 13.5d | 2011-08-02 | 2011-08-22 | 39 | 0d |
| 65 |  | Confeccionar requerimientos de infraestructura | 4h | 2011-08-02 | 2011-08-03 |  | 0d |
| 66 |  | Seleccionar depósito | 24h | 2011-08-03 | 2011-08-08 | 65 | 0d |
| 67 |  | Alquilar depósito | 80h | 2011-08-08 | 2011-08-22 | 66 | 0d |
| 68 |  | Contratar servicio de seguridad | 40h | 2011-08-08 | 2011-08-15 | 66 | 5d |
| 69 | 1.4.2 | **Equipamientos y materiales recibidos** | 40d | 2011-08-22 | 2011-10-17 | 62, 64 | 0d |
| 70 |  | Recibir equipamientos y materiales | 160h | 2011-08-22 | 2011-09-19 |  | 0d |

| ID | WBS | Task | Duration | Start | Finish | Predecessors | Total float |
| --- | --- | --- | --- | --- | --- | --- | --- |
| 71 |  | Controlar equipamientos y materiales | 40h | 2011-09-19 | 2011-09-26 | 70 | 0d |
| 72 |  | Catalogar equipamientos y materiales | 80h | 2011-09-26 | 2011-10-10 | 71 | 0d |
| 73 |  | Almacenar equipamientos y materiales | 40h | 2011-10-10 | 2011-10-17 | 72 | 0d |
| 74 | 1.4.3 | **Embalaje realizado** | 23d | 2012-07-27 | 2012-08-29 | 69, 89 | 0d |
| 75 |  | Seleccionar equipos | 40h | 2012-07-27 | 2012-08-03 |  | 0d |
| 76 |  | Asignar centro educativo | 24h | 2012-08-03 | 2012-08-08 | 75 | 0d |
| 77 |  | Embalar equipamiento | 80h | 2012-08-08 | 2012-08-22 | 76 | 0d |
| 78 |  | Controlar equipamiento | 40h | 2012-08-22 | 2012-08-29 | 77 | 0d |
| 79 | 1.4.4 | **Equipamientos y materiales entregados** | 110d | 2012-08-29 | 2013-01-30 | 74 | 0d |
| 80 |  | Seleccionar servicio de transporte | 40h | 2012-08-29 | 2012-09-05 |  | 0d |
| 81 | 1.4.4.2 | **Hoja de ruta definida** | 10d | 2012-09-05 | 2012-09-19 | 80 | 0d |
| 82 |  | Confeccionar hoja de ruta | 40h | 2012-09-05 | 2012-09-12 |  | 0d |
| 83 |  | Gestionar hoja de ruta | 40h | 2012-09-12 | 2012-09-19 | 82 | 0d |
| 84 |  | Cargar equipamiento y materiales | 120h | 2012-09-19 | 2012-10-10 | 81 | 0d |
| 85 |  | Transportar equipamientos y materiales | 400h | 2012-10-10 | 2012-12-19 | 84 | 0d |
| 86 |  | Descargar equipamientos y materiales | 200h | 2012-12-19 | 2013-01-23 | 85 | 0d |
| 87 |  | Controlar equipamientos y materiales | 40h | 2013-01-23 | 2013-01-30 | 86 | 0d |
| 88 | 1.5 | **Centros de capacitación instalados** | 1016.88d | 2011-08-22 | 2015-07-15 |  | 0d |
| 89 | 1.5.1 | **Equipos informáticos configurados** | 243.88d | 2011-08-22 | 2012-07-27 | 64 | 0d |
| 90 |  | Montar infraestructura del laboratorio | 5h | 2011-08-22 | 2011-08-22 |  | 39.38d |
| 91 | 1.5.1.2 | **Servidores configurados** | 23.62d | 2011-10-17 | 2011-11-17 | 69, 90 | 180.25d |
| 92 |  | Preparar paquete de software | 1h | 2011-10-17 | 2011-10-17 |  | 180.25d |
| 93 |  | Instalar paquete de software | 16h | 2011-10-17 | 2011-10-19 | 92 | 180.25d |
| 94 |  | Testear servidor | 16h | 2011-10-19 | 2011-10-21 | 93 | 180.25d |
| 95 |  | Clonar servidores | 156h | 2011-10-21 | 2011-11-17 | 94 | 180.25d |
| 96 | 1.5.1.3 | **PC's configuradas** | 203.88d | 2011-10-17 | 2012-07-27 | 69, 90 | 0d |
| 97 |  | Preparar paquete de software | 1h | 2011-10-17 | 2011-10-17 |  | 0d |
| 98 |  | Instalar paquete de software | 16h | 2011-10-17 | 2011-10-19 | 97 | 0d |
| 99 |  | Testear PC | 16h | 2011-10-19 | 2011-10-21 | 98 | 0d |
| 100 |  | Clonar PC's | 1598h | 2011-10-21 | 2012-07-27 | 99 | 0d |
| 101 | 1.5.2 | **Infraestructura instalada** | 640d | 2013-01-30 | 2015-07-15 | 79 | 0d |
| 102 |  | Montar mobiliario | 4800h | 2013-01-30 | 2015-05-20 |  | 0d |
| 103 |  | Realizar instalación eléctrica | 960h | 2013-01-30 | 2013-07-17 |  | 480d |
| 104 |  | Realizar cableado estructurado | 4800h | 2013-01-30 | 2015-05-20 |  | 0d |
| 105 |  | Instalación y configuración de acceso a internet | 320h | 2015-05-20 | 2015-07-15 | 102, 103, 104 | 0d |
| 106 |  | Configuración de equipos informáticos en red de datos | 320h | 2015-05-20 | 2015-07-15 | 102, 103, 104 | 0d |
| 107 | 1.6 | **Docentes capacitados** | 1154.25d | 2011-07-14 | 2015-12-16 |  | 0d |
| 108 | 1.6.1 | **Capacitadores seleccionados** | 21d | 2011-07-14 | 2011-08-11 | 10 | 1007.25d |
| 109 |  | Confeccionar método de selección | 8h | 2011-07-14 | 2011-07-14 |  | 1007.25d |
| 110 |  | Comunicar a instituciones educativas | 80h | 2011-07-15 | 2011-07-28 | 109 | 1007.25d |
| 111 |  | Evaluar capacitadores | 80h | 2011-07-29 | 2011-08-11 | 110 | 1007.25d |
| 112 | 1.6.2 | **Programa de contenidos** | 16d | 2011-08-12 | 2011-09-02 | 108 | 1007.25d |
| 113 |  | Definir objetivos específicos | 8h | 2011-08-12 | 2011-08-12 |  | 1007.25d |
| 114 |  | Confeccionar temario | 8h | 2011-08-15 | 2011-08-15 | 113 | 1007.25d |
| 115 |  | Confeccionar actividades | 16h | 2011-08-16 | 2011-08-17 | 114 | 1007.25d |
| 116 |  | Establecer duración y método de capacitación | 8h | 2011-08-18 | 2011-08-18 | 115 | 1007.25d |
| 117 |  | Definir material de estudio | 8h | 2011-08-19 | 2011-08-19 | 116 | 1007.25d |
| 118 |  | Gestionar material de estudio | 80h | 2011-08-22 | 2011-09-02 | 117 | 1007.25d |
| 119 | 1.6.3 | **Docentes seleccionados** | 21d | 2011-07-29 | 2011-08-29 | 13 | 1011.38d |
| 120 |  | Confeccionar perfil del docente | 8h | 2011-07-29 | 2011-08-01 |  | 1011.38d |
| 121 |  | Comunicar perfil a escuelas | 80h | 2011-08-01 | 2011-08-15 | 120 | 1011.38d |
| 122 |  | Evaluar docentes | 80h | 2011-08-15 | 2011-08-29 | 121 | 1011.38d |
| 123 | 1.6.4 | **Capacitación docente** | 1117.25d | 2011-09-05 | 2015-12-16 | 112, 119 | 0d |
| 124 | 1.6.4.1 | **Capacitación centralizada** | 25d | 2011-09-05 | 2011-10-07 |  | 1092.25d |
| 125 |  | Construir cronograma de llegada y estadía de docentes | 40h | 2011-09-05 | 2011-09-09 |  | 1092.25d |
| 126 |  | Preparar alojamiento de los docentes | 80h | 2011-09-12 | 2011-09-23 | 125 | 1092.25d |
| 127 |  | Coordinar llegada de docentes | 32h | 2011-09-26 | 2011-09-29 | 126 | 1092.25d |
| 128 |  | Dictar capacitación | 40h | 2011-09-30 | 2011-10-06 | 127 | 1092.25d |
| 129 |  | Plantear plan de acción a implementar | 8h | 2011-10-07 | 2011-10-07 | 128 | 1092.25d |
| 130 | 1.6.4.2 | **Capacitación itinerante** | 1117.25d | 2011-09-05 | 2015-12-16 |  | 0d |
| 131 |  | Coordinar cronograma de visitas | 240h | 2011-09-05 | 2011-10-14 | 13 | 1087.25d |
| 132 |  | Gestionar visita de los capacitadores | 240h | 2015-07-15 | 2015-08-26 | 88 | 0d |
| 133 |  | Dictar capacitación | 320h | 2015-08-26 | 2015-10-21 | 132 | 0d |
| 134 |  | Presentar plan de acción | 320h | 2015-10-21 | 2015-12-16 | 133 | 0d |

## Version 2 (saved 2011-07-25)

Last finish 2015-12-16 → 2015-07-22 (-147d).

Changed:

| ID | Task | Start | Finish | Duration | Total float | Predecessors | Other |
| --- | --- | --- | --- | --- | --- | --- | --- |
| 1 | **ICCI** |  | 2015-12-16 → 2015-07-22 (-147d) | 1179.25d → 1074.75d |  |  |  |
| 28 | **Equipamiento comprado** |  | 2011-08-19 → 2011-08-22 (+3d) | 51.38d → 52.88d |  |  |  |
| 29 | **Planificación de requerimientos de compras** |  | 2011-08-02 → 2011-08-03 (+1d) | 38.88d → 39.23d |  |  |  |
| 30 | **Políticas de compra establecidas** |  | 2011-08-01 → 2011-08-02 (+1d) | 37.88d → 38.05d |  |  |  |
| 31 | **Parámetros de costo establecidos** |  | 2011-08-01 → 2011-08-02 (+1d) | 1d → 1.18d |  |  |  |
| 32 | Confeccionar parametrización de costo de infraestructura |  | 2011-08-01 → 2011-08-02 (+1d) | 8h → 9.41h |  |  | resources none → Jose Chavez [85%] |
| 33 | Confeccionar parametrización de costo de mobiliario |  | 2011-08-01 → 2011-08-02 (+1d) | 8h → 9.41h |  |  | resources none → Jose Chavez [85%] |
| 34 | Parámetros de disponibilidad establecidos |  | 2011-06-09 → 2011-06-10 (+1d) | 8h → 9.41h | 1178.25d → 1178.57d |  | resources none → Jose Chavez [85%]; Ing Mauricio Diaz [85%] |
| 35 | **Parámetros de cantidad establecidos** |  |  | 0.5d → 0.59d | 0.5d → 0.59d |  |  |
| 36 | Confeccionar parametrización de equipamiento informático |  |  | 4h → 4.71h | 0.5d → 0.59d |  | resources none → Jose Chavez [85%] |
| 37 | Confeccionar parametrización de mobiliario |  |  | 4h → 4.71h | 0.5d → 0.59d |  | resources none → Jose Chavez [85%] |
| 38 | Parámetros de garantia establecidos |  |  |  | 1179d → 1179.5d |  | resources none → Jose Chavez [85%]; Ing Mauricio Diaz [85%] |
| 39 | **Informes técnicos aprobados** | 2011-08-01 → 2011-08-02 (+1d) | 2011-08-02 → 2011-08-03 (+1d) | 1d → 1.18d |  |  |  |
| 40 | Realizar informe de pedido de equipamiento informático | 2011-08-01 → 2011-08-02 (+1d) | 2011-08-02 → 2011-08-03 (+1d) | 8h → 9.41h |  |  | resources none → Jose Chavez [85%] |
| 41 | Realizar informe de pedido de mobiliario | 2011-08-01 → 2011-08-02 (+1d) | 2011-08-02 → 2011-08-03 (+1d) | 8h → 9.41h |  |  | resources none → Jose Chavez [85%] |
| 42 | Verificar cobertura de requerimientos | 2011-08-01 → 2011-08-02 (+1d) |  | 2h → 2.35h | 0.75d → 0.88d |  | resources none → Jose Chavez [85%] |
| 43 | **Cotizaciones solicitadas** | 2011-08-02 → 2011-08-03 (+1d) | 2011-08-12 → 2011-08-15 (+3d) | 7.5d → 8.29d | 1d → 0d |  |  |
| 44 | **Pedido de cotización confeccionado** | 2011-08-02 → 2011-08-03 (+1d) | 2011-08-09 → 2011-08-10 (+1d) | 4.5d → 5.29d | 1d → 0d |  |  |
| 45 | Confeccionar pedido de cotización de hardware | 2011-08-02 → 2011-08-03 (+1d) | 2011-08-05 → 2011-08-04 (-1d) | 24h → 9.41h | 2.5d → 4.12d |  | resources none → Jorge Perez [85%] |
| 46 | Confeccionar pedido de cotización de software | 2011-08-02 → 2011-08-03 (+1d) | 2011-08-05 → 2011-08-08 (+3d) | 24h → 28.23h | 2.5d → 1.76d |  | resources none → Jorge Perez [85%] |
| 47 | Confeccionar pedido de cotización de insumos | 2011-08-02 → 2011-08-03 (+1d) | 2011-08-09 → 2011-08-10 (+1d) | 36h → 42.35h | 1d → 0d |  | resources none → Jorge Perez [85%] |
| 48 | Confeccionar pedido de cotización de mobiliario | 2011-08-02 → 2011-08-03 (+1d) |  | 2h → 2.35h | 5.25d → 5d |  | resources none → Jorge Perez [85%] |
| 49 | **Pedido de cotizaciones enviadas** | 2011-08-09 → 2011-08-10 (+1d) | 2011-08-12 → 2011-08-15 (+3d) |  | 1d → 0d |  |  |
| 50 | Seleccionar proveedores propuestos | 2011-08-09 → 2011-08-10 (+1d) | 2011-08-12 → 2011-08-15 (+3d) |  | 1d → 0d |  | resources none → Jorge Perez [85%]; Jose Chavez [85%]; Ing Mauricio Diaz [85%] |
| 51 | Enviar pedido de cotización de hardware | 2011-08-09 → 2011-08-10 (+1d) | 2011-08-10 → 2011-08-11 (+1d) | 6h → 7.06h | 3.25d → 2.12d |  | resources none → Jorge Perez [85%] |
| 52 | Enviar pedido de cotización de software | 2011-08-09 → 2011-08-10 (+1d) | 2011-08-10 → 2011-08-11 (+1d) | 6h → 7.06h | 3.25d → 2.12d |  | resources none → Jorge Perez [85%] |
| 53 | Enviar pedido de cotización de insumos | 2011-08-09 → 2011-08-10 (+1d) | 2011-08-09 → 2011-08-10 (+1d) | 2h → 2.35h | 3.75d → 2.71d |  | resources none → Jorge Perez [85%] |
| 54 | Enviar pedido de cotización de mobiliario | 2011-08-09 → 2011-08-10 (+1d) | 2011-08-09 → 2011-08-10 (+1d) | 2h → 2.35h | 3.75d → 2.71d |  | resources none → Jorge Perez [85%] |
| 55 | **Pedidos realizados** | 2011-08-12 → 2011-08-15 (+3d) | 2011-08-19 → 2011-08-22 (+3d) | 5d → 5.35d | 1d → 0d |  |  |
| 56 | **Proveedores seleccionados** | 2011-08-12 → 2011-08-15 (+3d) | 2011-08-15 → 2011-08-16 (+1d) | 1d → 1.18d | 1d → 0d |  |  |
| 57 | Realizar evaluación de costos | 2011-08-12 → 2011-08-15 (+3d) | 2011-08-15 → 2011-08-16 (+1d) | 8h → 9.41h | 1d → 0d |  | resources none → Jose Chavez [85%] |
| 58 | Analizar tiempo de entrega | 2011-08-12 → 2011-08-15 (+3d) | 2011-08-12 → 2011-08-15 (+3d) | 2h → 2.35h | 1.75d → 0.88d |  | resources none → Jose Chavez [85%] |
| 59 | Evaluar reputación de proveedor | 2011-08-12 → 2011-08-15 (+3d) | 2011-08-12 → 2011-08-15 (+3d) | 2h → 2.35h | 1.75d → 0.88d |  | resources none → Jose Chavez [85%] |
| 60 | **Pedidos enviados** | 2011-08-15 → 2011-08-16 (+1d) | 2011-08-19 → 2011-08-22 (+3d) | 4d → 4.18d | 1d → 0d |  |  |
| 61 | Confeccionar ordenes de compra | 2011-08-15 → 2011-08-16 (+1d) | 2011-08-16 → 2011-08-17 (+1d) | 8h → 9.41h | 1d → 0d |  | resources none → Jose Chavez [85%] |
| 62 | Realizar pedidos de compra a proveedores | 2011-08-16 → 2011-08-17 (+1d) | 2011-08-19 → 2011-08-22 (+3d) |  | 1d → 0d |  | resources none → Jose Chavez [85%]; Jorge Perez [85%] |
| 63 | **Plan de logística** | 2011-08-02 → 2011-08-03 (+1d) | 2013-01-30 → 2013-02-06 (+7d) | 390.38d → 395.52d |  |  |  |
| 64 | **Depósito alquilado** | 2011-08-02 → 2011-08-03 (+1d) |  |  | 0d → 0.15d |  |  |
| 65 | Confeccionar requerimientos de infraestructura | 2011-08-02 → 2011-08-03 (+1d) |  |  | 0d → 0.15d |  | resources none → Ing Thompson |
| 66 | Seleccionar depósito |  |  |  | 0d → 0.15d |  | resources none → Ing Thompson [85%]; Asist. Deposito1 [85%]; Asist. Deposito2 [85%] |
| 67 | Alquilar depósito |  |  |  | 0d → 0.15d |  | resources none → Ing Thompson [85%]; Asist. Deposito1 [85%] |
| 68 | Contratar servicio de seguridad |  |  |  | 5d → 5.15d |  | resources none → Ing Thompson |
| 70 | Recibir equipamientos y materiales |  |  |  |  |  | resources none → Ing Thompson [85%]; Asist. Deposito1 [85%]; Asist. Deposito2 [85%]; Asist. Deposito3 [85%] |
| 71 | Controlar equipamientos y materiales |  |  |  |  |  | resources none → Asist. Deposito1 [85%]; Ing Herbert Powell [85%] |
| 72 | Catalogar equipamientos y materiales |  |  |  |  |  | resources none → Asist. Deposito1 [85%]; Asist. Deposito2 [85%]; Ing Herbert Powell [85%] |
| 73 | Almacenar equipamientos y materiales |  |  |  |  |  | resources none → Asist. Deposito1 [85%]; Ing Herbert Powell [85%] |
| 75 | Seleccionar equipos |  |  |  |  | none → 69, 89 | resources none → Ing Herbert Powell [85%]; Asist. Deposito1 [85%] |
| 76 | Asignar centro educativo |  |  |  |  |  | resources none → Asist. Deposito1 [85%] |
| 77 | Embalar equipamiento |  |  |  |  |  | resources none → Asist. Deposito1 [85%]; Asist. Deposito2 [85%] |
| 78 | Controlar equipamiento |  |  |  |  |  | resources none → Asist. Deposito1 [85%] |
| 79 | **Equipamientos y materiales entregados** |  | 2013-01-30 → 2013-02-06 (+7d) | 110d → 115d |  |  |  |
| 80 | Seleccionar servicio de transporte |  |  |  |  |  | resources none → Ing Herbert Powell [85%]; Asist. Deposito1 [85%] |
| 81 | **Hoja de ruta definida** |  | 2012-09-19 → 2012-09-26 (+7d) | 10d → 15d |  |  |  |
| 82 | Confeccionar hoja de ruta |  | 2012-09-12 → 2012-09-19 (+7d) | 40h → 80h |  |  | resources none → Ing Herbert Powell [85%] |
| 83 | Gestionar hoja de ruta | 2012-09-12 → 2012-09-19 (+7d) | 2012-09-19 → 2012-09-26 (+7d) |  |  |  | resources none → Ing Herbert Powell [85%] |
| 84 | Cargar equipamiento y materiales | 2012-09-19 → 2012-09-26 (+7d) | 2012-10-10 → 2012-10-17 (+7d) |  |  |  | resources none → Asist. Deposito1 [85%]; Asist. Deposito2 [85%] |
| 85 | Transportar equipamientos y materiales | 2012-10-10 → 2012-10-17 (+7d) | 2012-12-19 → 2012-12-26 (+7d) |  |  |  | resources none → Transportista1 [85%]; Transportista2 [85%]; Transportitas3 [85%] |
| 86 | Descargar equipamientos y materiales | 2012-12-19 → 2012-12-26 (+7d) | 2013-01-23 → 2013-01-30 (+7d) |  |  |  | resources none → Asist. Deposito1 [85%]; Asist. Deposito2 [85%] |
| 87 | Controlar equipamientos y materiales | 2013-01-23 → 2013-01-30 (+7d) | 2013-01-30 → 2013-02-06 (+7d) |  |  |  | resources none → Asist. Deposito1 [85%] |
| 88 | **Centros de capacitación instalados** |  | 2015-07-15 → 2015-07-22 (+7d) | 1016.88d → 1022.02d |  | none → 64 |  |
| 89 | **Equipos informáticos configurados** |  |  | 243.88d → 244.02d |  |  |  |
| 90 | Montar infraestructura del laboratorio |  | 2011-08-22 → 2011-08-23 (+1d) |  | 39.38d → 39.52d |  | resources none → Ing Jorge Valdez [85%]; Asistente1 [85%]; Asistente2 [85%] |
| 91 | **Servidores configurados** |  | 2011-11-17 → 2011-11-18 (+1d) |  |  |  |  |
| 92 | Preparar paquete de software |  |  |  |  | none → 69, 90 | resources none → Ing Lucas Faule |
| 93 | Instalar paquete de software | 2011-10-17 → 2011-10-18 (+1d) |  |  |  |  | resources none → Ing Lucas Faule |
| 94 | Testear servidor | 2011-10-19 → 2011-10-20 (+1d) |  |  |  |  | resources none → Ing Lucas Faule |
| 95 | Clonar servidores | 2011-10-21 → 2011-10-24 (+3d) | 2011-11-17 → 2011-11-18 (+1d) |  |  |  | resources none → Ing Lucas Faule [85%]; Instalador1 [85%]; Instalador2 [85%]; Instalador3 [85%] |
| 97 | Preparar paquete de software |  |  |  |  | none → 69, 90 | resources none → Ing Lucas Faule |
| 98 | Instalar paquete de software | 2011-10-17 → 2011-10-18 (+1d) |  |  |  |  | resources none → Ing Lucas Faule |
| 99 | Testear PC | 2011-10-19 → 2011-10-20 (+1d) |  |  |  |  | resources none → Ing Lucas Faule |

| ID | Task | Start | Finish | Duration | Total float | Predecessors | Other |
| --- | --- | --- | --- | --- | --- | --- | --- |
| 100 | Clonar PC's | 2011-10-21 → 2011-10-24 (+3d) |  |  |  |  | resources none → Ing Lucas Faule; Instalador1 [85%]; Instalador2 [85%]; Instalador3 [85%]; Instalador4 [85%]; Instalador5 [85%]; Instalador6 [85%]; Instalador7 [85%]; Instalador8 [85%]; Instalador9 [85%] |
| 101 | **Infraestructura instalada** | 2013-01-30 → 2013-02-06 (+7d) | 2015-07-15 → 2015-07-22 (+7d) |  |  |  |  |
| 102 | Montar mobiliario | 2013-01-30 → 2013-02-06 (+7d) | 2015-05-20 → 2015-05-27 (+7d) |  |  |  | resources none → Ing Jorge Valdez [85%]; Asistente1 [85%]; Asistente2 [85%]; Asistente3 [85%]; Asistente4 [85%]; Asistente5 [85%]; Asistente6 [85%]; Asistente7 [85%]; Asistente8 [85%]; Asistente9 [85%] |
| 103 | Realizar instalación eléctrica | 2013-01-30 → 2013-02-06 (+7d) | 2013-07-17 → 2013-07-24 (+7d) |  |  |  | resources none → Electricista1 [85%]; Electricista2 [85%]; Electricista3 [85%] |
| 104 | Realizar cableado estructurado | 2013-01-30 → 2013-02-06 (+7d) | 2015-05-20 → 2015-05-27 (+7d) |  |  |  | resources none → Tecnico1 [85%]; Tecnico2 [85%]; Tecnico3 [85%]; Tecnico4 [85%]; Tecnico5 [85%]; Tecnico6 [85%]; Tecnico7 [85%]; Tecnico8 [85%]; Tecnico9 [85%]; Tecnico10 [85%] |
| 105 | Instalación y configuración de acceso a internet | 2015-05-20 → 2015-05-27 (+7d) | 2015-07-15 → 2015-07-22 (+7d) |  |  |  | resources none → Configurador1 |
| 106 | Configuración de equipos informáticos en red de datos | 2015-05-20 → 2015-05-27 (+7d) | 2015-07-15 → 2015-07-22 (+7d) |  |  |  | resources none → Configurador2 |
| 107 | **Docentes capacitados** |  | 2015-12-16 → 2012-03-16 (-1370d) | 1154.25d → 177d | 0d → 872.75d |  |  |
| 123 | **Capacitación docente** |  | 2015-12-16 → 2012-03-16 (-1370d) | 1117.25d → 140d | 0d → 872.75d |  |  |
| 130 | **Capacitación itinerante** |  | 2015-12-16 → 2012-03-16 (-1370d) | 1117.25d → 140d | 0d → 872.75d |  |  |
| 132 | Gestionar visita de los capacitadores | 2015-07-15 → 2011-10-17 (-1367d) | 2015-08-26 → 2011-11-25 (-1370d) |  | 0d → 872.75d | 88 → 131 |  |
| 133 | Dictar capacitación | 2015-08-26 → 2011-11-28 (-1367d) | 2015-10-21 → 2012-01-20 (-1370d) |  | 0d → 872.75d |  |  |
| 134 | Presentar plan de acción | 2015-10-21 → 2012-01-23 (-1367d) | 2015-12-16 → 2012-03-16 (-1370d) |  | 0d → 872.75d |  |  |
